# ULTRASAT

Schedule from MS Project XML, 2020-12-01 to 2024-08-07, A marks actual dates.

## Calendars

- Standard: Mon-Thu 08:00-12:00, 13:00-17:00; Fri-Sat off; Sun 08:00-12:00, 13:00-17:00.

## Resources

| Resource |
| --- |
| Eran |
| Sagi |
| Puzzle |
| Lior |
| Yossi |
| Team |
| QA |
| TechWriter |
| Chen |

## Schedule

| ID | WBS | Task | Type | Duration | Start | Finish | Complete | Remaining | Constraint | Resources | Text1 |
| --- | --- | --- | --- | --- | --- | --- | --- | --- | --- | --- | --- |
| 1 | 1 | **Project Management (1.1)** |  | 805d | 2020-12-01 A | 2024-01-01 | 4% | 772.8d | start no earlier than 2020-12-01 |  |  |
| 2 | 1.1 | **System Engineering** |  | 283d | 2020-12-01 A | 2021-12-30 | 21% | 223.57d |  |  |  |
| 3 | 1.1.1 | General design (Puzzle documents) |  | 65d | 2020-12-01 A | 2021-03-01 | 100% |  |  | Puzzle | Complete |
| 4 | 1.1.2 | Project timeline planning |  | 46d | 2021-05-01 | 2021-07-01 |  |  |  | Lior |  |
| 5 | 1.1.3 | In-depth design of various project requirements and components | manual | 0d | 2020-12-01 | 2020-12-01 |  |  |  | Team |  |
| 6 | 1.1.4 | On going documentation and design of additional features |  | 196d | 2021-04-01 | 2021-12-30 |  |  |  | Team |  |
| 8 | 1.3 | **Integrated Logistic Support (ILS)** |  | 305d | 2021-04-01 | 2022-06-01 |  |  |  |  |  |
| 9 | 1.3.1 | Collect information |  | 261d | 2021-04-01 | 2022-03-31 |  |  |  | Lior |  |
| 10 | 1.3.2 | Design |  | 262d | 2021-06-01 | 2022-06-01 |  |  |  | Lior |  |
| 11 | 1.3.3 | Write docuements |  | 262d | 2021-06-01 | 2022-06-01 |  |  |  | Lior |  |
| 13 | 1.5 | **Standard Operating Procedure (SOP) & Training - ???** |  | 262d | 2021-05-01 | 2022-05-01 |  |  |  |  |  |
| 14 | 1.5.1 | Collect information |  | 262d | 2021-05-01 | 2022-05-01 |  |  |  | Lior |  |
| 15 | 1.5.2 | Design |  | 262d | 2021-05-01 | 2022-05-01 |  |  |  | Lior |  |
| 16 | 1.5.3 | Write operating procedures ??? | manual | 0d | 2020-12-01 | 2020-12-01 |  |  |  | Lior |  |
| 17 | 1.5.4 | Write training materials ??? | manual | 0d | 2020-12-01 | 2020-12-01 |  |  |  | Lior |  |
| 19 | 1.7 | **Hardware Procurement** |  | 698d | 2021-05-01 | 2024-01-01 |  |  |  | Lior |  |
| 20 | 1.7.1 | **Comm Room** |  | 676d | 2021-05-01 | 2023-11-30 |  |  |  | Lior |  |
| 21 | 1.7.1.1 | Specifications |  | 22d | 2023-03-01 | 2023-03-30 |  |  |  | Lior |  |
| 22 | 1.7.1.2 | Servers |  | 87d | 2023-03-01 | 2023-06-29 |  |  |  | Lior |  |
| 23 | 1.7.1.3 | Storage |  | 87d | 2023-03-01 | 2023-06-29 |  |  |  | Lior |  |
| 24 | 1.7.1.4 | Racks, Switches, Etc. |  | 87d | 2023-03-01 | 2023-06-29 |  |  |  |  |  |
| 25 | 1.7.1.5 | Comm, Elect, A/C (Check with Hemda) |  | 67d | 2021-05-01 | 2021-08-01 |  |  |  | Lior |  |
| 26 | 1.7.1.6 | **Installation and Setup** |  | 610d | 2021-08-01 | 2023-11-30 |  |  |  |  |  |
| 27 | 1.7.1.6.1 | Servers installation & configuration |  | 88d | 2023-08-01 | 2023-11-30 |  |  |  |  |  |
| 28 | 1.7.1.6.2 | Storage installation & configuration |  | 88d | 2023-08-01 | 2023-11-30 |  |  |  |  |  |
| 29 | 1.7.1.6.3 | Network setup |  | 89d | 2021-08-01 | 2021-12-01 |  |  |  |  |  |
| 30 | 1.7.1.6.4 | Server, Storage, Network - Evaluation |  | 66d | 2023-09-01 | 2023-11-30 |  |  |  |  |  |

| ID | WBS | Task | Duration | Start | Finish | Constraint | Resources |
| --- | --- | --- | --- | --- | --- | --- | --- |
| 31 | 1.7.2 | **SOC** | 132d | 2023-03-01 | 2023-08-31 |  | Lior |
| 32 | 1.7.2.1 | Specifications | 22d | 2023-03-01 | 2023-03-30 |  |  |
| 33 | 1.7.2.2 | Workstations | 132d | 2023-03-01 | 2023-08-31 |  |  |
| 34 | 1.7.2.3 | Monitors (Wall + Desktop) | 132d | 2023-03-01 | 2023-08-31 |  |  |
| 35 | 1.7.3 | **Office - ???** | 589d | 2021-05-01 | 2023-08-01 |  | Lior |
| 36 | 1.7.3.1 | Specifications | 1d | 2021-05-01 | 2021-05-01 |  |  |
| 37 | 1.7.3.2 | Workstations | 110d | 2023-03-01 | 2023-08-01 |  |  |
| 38 | 1.7.3.3 | Monitors | 110d | 2023-03-01 | 2023-08-01 |  |  |
| 39 | 1.7.4 | **New Building and Auditorium** | 1d | 2024-01-01 | 2024-01-01 |  |  |
| 40 | 1.7.4.1 | Specifications | 1d | 2024-01-01 | 2024-01-01 |  |  |
| 42 | 1.7.6 | **Misc** | 198d | 2023-04-01 | 2024-01-01 |  | Lior |
| 43 | 1.7.6.1 | Procurement of spare parts | 1d | 2024-01-01 | 2024-01-01 |  |  |
| 44 | 1.7.6.2 | Track procurement and manage installation | 1d | 2023-04-01 | 2023-04-01 |  |  |
| 45 | 1.7.6.3 | Write documentation for system parts | 1d | 2023-04-01 | 2023-04-01 |  |  |
| 47 | 3 | **Infrastructure (1.2)** | 940d | 2021-01-01 | 2024-08-07 | start no earlier than 2021-01-01 |  |
| 48 | 3.1 | **SOC Room** | 111d | 2021-05-01 | 2021-09-30 |  |  |
| 49 | 3.1.1 | Passive (Cables, Connectors) | 67d | 2021-05-01 | 2021-08-01 |  |  |
| 50 | 3.1.2 | Active (Racks, Network switches, network connection) | 45d | 2021-08-01 | 2021-09-30 |  |  |
| 51 | 3.1.3 | Multimedia - Monitors, Matrix | 45d | 2021-08-01 | 2021-09-30 |  |  |
| 52 | 3.2 | **Visitor Center - New Building - TBD** | 5d | 2024-08-01 | 2024-08-07 |  |  |
| 53 | 3.2.1 | Passive (Racks, Cables, Connectors) | 5d | 2024-08-01 | 2024-08-07 |  |  |
| 54 | 3.2.2 | Active (Network switches, network connection) | 5d | 2024-08-01 | 2024-08-07 |  |  |
| 55 | 3.2.3 | Multimedia | 5d | 2024-08-01 | 2024-08-07 |  |  |
| 56 | 3.3 | **Electronics (Server) Room** | 111d | 2021-05-01 | 2021-09-30 |  |  |
| 57 | 3.3.1 | Passive (Racks, Cables, Connectors) | 67d | 2021-05-01 | 2021-08-01 |  |  |
| 58 | 3.3.2 | Active (Network switches, network connection) | 45d | 2021-08-01 | 2021-09-30 |  |  |

| ID | WBS | Task | Duration | Start | Finish | Predecessors | Constraint | Resources |
| --- | --- | --- | --- | --- | --- | --- | --- | --- |
| 59 | 3.4 | **WIS Network Requirements** | 155d | 2021-05-01 | 2021-12-01 |  |  |  |
| 60 | 3.4.1 | Write detailed specifications for the hardware and networking components | 46d | 2021-05-01 | 2021-07-01 |  |  |  |
| 61 | 3.4.2 | Network installation and setup | 89d | 2021-08-01 | 2021-12-01 |  |  |  |
| 62 | 3.5 | **Secured Interfaces to IAI (see also Cyber)** | 326d | 2021-01-01 | 2022-03-31 |  |  |  |
| 63 | 3.5.1 | **Communication** | 66d | 2022-01-01 | 2022-03-31 |  |  | Lior |
| 64 | 3.5.1.1 | Fiber / ADSL / Redundancy | 44d | 2022-01-01 | 2022-03-01 |  |  | Lior |
| 65 | 3.5.1.2 | IPSec / Cyber / Firewall / VPN | 44d | 2022-01-01 | 2022-03-01 |  |  | Lior |
| 66 | 3.5.1.3 | Integration & Testing | 23d | 2022-03-01 | 2022-03-31 |  |  | Lior |
| 67 | 3.5.2 | Protocol specifications with IAI - XML etc. | 240d | 2021-01-01 | 2021-12-01 |  |  | Yossi |
| 69 | 3.7 | **Secured WEB Interfaces (see also Cyber)** | 154d | 2022-01-01 | 2022-08-02 |  |  |  |
| 70 | 3.7.1 | Specifications | 110d | 2022-01-01 | 2022-06-01 |  |  | Lior |
| 71 | 3.7.2 | Check cyber aspects | 110d | 2022-01-01 | 2022-06-01 |  |  | Lior |
| 72 | 3.7.3 | Procurement | 44d | 2022-06-02 | 2022-08-02 | 71 |  | Lior |
| 74 | 5 | **Observation, Operation, Management, Control (1.3) [Software]** | 371d | 2021-04-01 | 2022-09-01 |  | start no earlier than 2021-04-01 |  |
| 75 | 5.1 | **Operations - SOC Command & Control** | 305d | 2021-04-01 | 2022-06-01 |  |  |  |
| 76 | 5.1.1 | Functional design | 196d | 2021-04-01 | 2021-12-30 |  |  | Chen |
| 77 | 5.1.2 | Software design | 196d | 2021-04-01 | 2021-12-30 |  |  | Chen |
| 78 | 5.1.3 | GUI design | 176d | 2021-05-01 | 2021-12-30 |  |  | Chen |
| 79 | 5.1.4 | Software development | 109d | 2022-01-01 | 2022-05-31 |  |  | Chen |
| 80 | 5.1.5 | **QA & Testing** | 67d | 2022-03-01 | 2022-06-01 |  |  |  |
| 81 | 5.1.5.1 | Testing | 67d | 2022-03-01 | 2022-06-01 |  |  | QA |
| 82 | 5.1.5.2 | Fixes & Improvements | 67d | 2022-03-01 | 2022-06-01 |  |  | Chen |
| 84 | 5.3 | **Observation Planning** | 351d | 2021-05-01 | 2022-09-01 |  |  |  |
| 85 | 5.3.1 | Functional design | 176d | 2021-05-01 | 2021-12-30 |  |  | Yossi |
| 86 | 5.3.2 | Software design | 87d | 2021-09-01 | 2021-12-30 |  |  | Chen |
| 87 | 5.3.3 | GUI design | 66d | 2021-09-01 | 2021-12-01 |  |  | Chen |
| 88 | 5.3.4 | Software development | 66d | 2022-01-01 | 2022-03-31 |  |  | Eran |
| 89 | 5.3.5 | Software develpment | 66d | 2022-01-01 | 2022-03-31 |  |  | Chen |
| 90 | 5.3.6 | GUI development - Desktop / Web | 67d | 2022-05-01 | 2022-08-01 |  |  | Chen |

| ID | WBS | Task | Type | Duration | Start | Finish | Resources |
| --- | --- | --- | --- | --- | --- | --- | --- |
| 91 | 5.3.7 | **QA & Testing** |  | 67d | 2022-06-01 | 2022-09-01 |  |
| 92 | 5.3.7.1 | Testing |  | 67d | 2022-06-01 | 2022-09-01 | QA |
| 93 | 5.3.7.2 | Fixes & Improvements |  | 67d | 2022-06-01 | 2022-09-01 | Chen |
| 95 | 5.5 | **Component Testing** |  | 111d | 2022-04-01 | 2022-09-01 |  |
| 96 | 5.5.1 | Testing specifications |  | 43d | 2022-04-01 | 2022-05-30 | QA |
| 97 | 5.5.2 | Testing |  | 90d | 2022-05-01 | 2022-09-01 | QA |
| 98 | 5.5.3 | Fixes & Improvements |  | 67d | 2022-06-01 | 2022-09-01 |  |
| 100 | 7 | **External Interfaces (1.4) - [Software]** |  | 0d | 2020-12-01 | 2020-12-01 |  |
| 101 | 7.1 | **IAI Interface** |  | 0d | 2020-12-01 | 2020-12-01 |  |
| 102 | 7.1.1 | Complete protocol specifications with IAI | manual | 0d | 2020-12-01 | 2020-12-01 | Yossi |
| 103 | 7.1.2 | Develop Incoming images handling - from IAI to Pipeline | manual | 10d |  |  | Chen |
| 104 | 7.1.3 | Develop Metadata handling - from IAI to Pipeline and Managers | manual | 20d |  |  | Chen |
| 105 | 7.1.4 | Develop Command & Control aspects | manual | 40d |  |  | Chen |
| 106 | 7.1.5 | Develop Simulators and testing tools | manual | 20d |  |  | Chen |
| 107 | 7.1.6 | **QA & Testing** |  | 0d | 2020-12-01 | 2020-12-01 | QA |
| 108 | 7.1.6.1 | Testing specifications | manual | 0d | 2020-12-01 | 2020-12-01 | QA |
| 109 | 7.1.6.2 | Testing | manual | 0d | 2020-12-01 | 2020-12-01 | QA |
| 110 | 7.1.6.3 | Fixes & Improvements | manual | 40d |  |  | Chen |
| 112 | 7.3 | **NASA Interface** |  | 0d | 2020-12-01 | 2020-12-01 |  |
| 113 | 7.3.1 | **Communication - Infrastructure** |  | 0d | 2020-12-01 | 2020-12-01 | Lior |
| 114 | 7.3.1.1 | Fiber / ADSL / Redundancy | manual | 5d |  |  | Lior |
| 115 | 7.3.1.2 | IPSec / Cyber / Firewall | manual | 5d |  |  | Lior |
| 116 | 7.3.1.3 | Integration & Testing | manual | 10d |  |  | QA |
| 117 | 7.3.2 | Design - requirements, protocols, access | manual | 10d |  |  | Yossi |
| 118 | 7.3.3 | Development | manual | 20d |  |  | Chen |

| ID | WBS | Task | Type | Duration | Start | Finish | Resources |
| --- | --- | --- | --- | --- | --- | --- | --- |
| 119 | 7.3.4 | **QA & Testing** |  | 0d | 2020-12-01 | 2020-12-01 | QA |
| 120 | 7.3.4.1 | Testing | manual | 0d | 2020-12-01 | 2020-12-01 | QA |
| 121 | 7.3.4.2 | Fixes & Improvements | manual | 20d |  |  | Chen |
| 123 | 7.5 | **DESY Interface** |  | 0d | 2020-12-01 | 2020-12-01 |  |
| 124 | 7.5.1 | **Communication - Infrastructure** |  | 0d | 2020-12-01 | 2020-12-01 | Lior |
| 125 | 7.5.1.1 | Fiber / ADSL / Redundancy | manual | 5d |  |  | Lior |
| 126 | 7.5.1.2 | IPSec / Cyber / Firewall | manual | 5d |  |  | Lior |
| 127 | 7.5.1.3 | Integration & Testing | manual | 5d |  |  | QA |
| 128 | 7.5.2 | Design - requirements, protocols, access | manual | 10d |  |  | Yossi |
| 129 | 7.5.3 | Development | manual | 20d |  |  | Chen |
| 130 | 7.5.4 | **QA & Testing** |  | 0d | 2020-12-01 | 2020-12-01 | QA |
| 131 | 7.5.4.1 | Write testing documents | manual | 5d |  |  | QA |
| 132 | 7.5.4.2 | Testing | manual | 10d |  |  | QA |
| 133 | 7.5.4.3 | Fixes & Improvements | manual | 20d |  |  | Chen |
| 135 | 7.7 | **LSST Interface** |  | 0d | 2020-12-01 | 2020-12-01 |  |
| 136 | 7.7.1 | **Communication - Infrastructure** |  | 0d | 2020-12-01 | 2020-12-01 | Lior |
| 137 | 7.7.1.1 | Fiber / ADSL / Redundancy | manual | 5d |  |  | Lior |
| 138 | 7.7.1.2 | IPSec / Cyber / Firewall | manual | 5d |  |  | Lior |
| 139 | 7.7.1.3 | Integration & Testing | manual | 5d |  |  | QA |
| 140 | 7.7.2 | Design - requirements, protocols, access | manual | 10d |  |  | Yossi |
| 141 | 7.7.3 | Development | manual | 20d |  |  | Chen |
| 142 | 7.7.4 | **QA & Testing** |  | 0d | 2020-12-01 | 2020-12-01 | QA |
| 143 | 7.7.4.1 | Write testing documents | manual | 5d |  |  | Lior |
| 144 | 7.7.4.2 | Testing | manual | 10d |  |  | QA |
| 145 | 7.7.4.3 | Fixes & Improvements | manual | 10d |  |  | Chen |

| ID | WBS | Task | Type | Duration | Start | Finish | Resources | Text1 |
| --- | --- | --- | --- | --- | --- | --- | --- | --- |
| 147 | 7.9 | **Public Interface** |  | 0d | 2020-12-01 | 2020-12-01 |  |  |
| 148 | 7.9.1 | **Communication - Infrastructure** |  | 0d | 2020-12-01 | 2020-12-01 |  |  |
| 149 | 7.9.1.1 | Fiber / ADSL / Redundancy | manual | 5d |  |  | Lior |  |
| 150 | 7.9.1.2 | IPSec / Cyber / Firewall | manual | 5d |  |  | Lior |  |
| 151 | 7.9.1.3 | Integration & Testing | manual | 5d |  |  | Lior |  |
| 152 | 7.9.2 | Design - requirements, protocols, access | manual | 10d |  |  | Yossi |  |
| 153 | 7.9.3 | Development | manual | 40d |  |  | Chen |  |
| 154 | 7.9.4 | **QA & Testing** |  | 0d | 2020-12-01 | 2020-12-01 | QA |  |
| 155 | 7.9.4.1 | Write testing documents | manual | 5d |  |  | QA |  |
| 156 | 7.9.4.2 | Testing | manual | 20d |  |  | QA |  |
| 157 | 7.9.4.3 | Fixes & Improvements | manual | 20d |  |  | Chen |  |
| 159 | 9 | **Image & Data Processing (1.5) [Software]** |  | 0d | 2021-01-01 | 2021-01-01 |  |  |
| 160 | 9.1 | **Pipeline (MATLAB)** |  | 0d | 2021-01-01 | 2021-01-01 |  |  |
| 161 | 9.1.1 | Functional design | manual | 0d | 2021-01-01 | 2021-01-01 | Eran | In Progress |
| 162 | 9.1.2 | Databases design | manual | 0d | 2021-01-01 | 2021-01-01 | Eran | In Progress |
| 163 | 9.1.3 | wcslib Matlab wrapper | manual | 0d | 2021-01-15 | 2021-01-15 | Chen |  |
| 164 | 9.1.4 | Classes design | manual | 0d | 2021-03-01 | 2021-03-01 | Eran | In Progress |
| 165 | 9.1.5 | Base classes (Header, Containers, etc) | manual | 0d | 2021-03-15 | 2021-03-15 | Eran | In Progress |
| 166 | 9.1.6 | Base classes - Log, Database | manual | 0d | 2020-12-01 | 2020-12-01 | Chen |  |
| 167 | 9.1.7 | Pipeline Manager | manual | 0d | 2020-12-01 | 2020-12-01 | Chen |  |
| 168 | 9.1.8 | Phase 1: Single step process - From RawImage to Products | manual | 0d | 2020-12-01 | 2020-12-01 | Eran |  |
| 169 | 9.1.9 | **Phase 2: LAST Project - Testcase** |  | 0d | 2020-12-01 | 2020-12-01 |  |  |
| 170 | 9.1.9.1 | Specifications | manual | 0d | 2020-12-01 | 2020-12-01 | Eran |  |
| 171 | 9.1.9.2 | Additional development | manual | 0d | 2020-12-01 | 2020-12-01 | Eran |  |
| 172 | 9.1.9.3 | Additional development | manual | 0d | 2020-12-01 | 2020-12-01 | Chen |  |
| 173 | 9.1.9.4 | QA & Testing | manual | 0d | 2020-12-01 | 2020-12-01 | Sagi |  |
| 174 | 9.1.9.5 | Fixes & Improvements | manual | 0d | 2020-12-01 | 2020-12-01 | Chen |  |

| ID | WBS | Task | Type | Duration | Start | Finish | Resources |
| --- | --- | --- | --- | --- | --- | --- | --- |
| 175 | 9.1.10 | **Pipeline GUI** |  | 0d | 2020-12-01 | 2020-12-01 | Chen |
| 176 | 9.1.10.1 | Design Pipeline GUI | manual | 5d |  |  | Chen |
| 177 | 9.1.10.2 | Develop Pipeline GUI | manual | 10d |  |  | Chen |
| 178 | 9.1.11 | **QA & Testing** |  | 0d | 2020-12-01 | 2020-12-01 | QA |
| 179 | 9.1.11.1 | Write testing documents | manual | 5d |  |  | Eran |
| 180 | 9.1.11.2 | Testing | manual | 40d |  |  | QA |
| 181 | 9.1.11.3 | Fixes | manual | 20d |  |  | Eran |
| 182 | 9.1.12 | Source code documentation & help | manual | 10d |  |  | Eran |
| 184 | 9.3 | **WIS Databases & Archives** |  | 0d | 2020-12-01 | 2020-12-01 |  |
| 185 | 9.3.1 | Specifications and design | manual | 5d |  |  | Yossi |
| 186 | 9.3.2 | Configurations - databases, replications, etc. | manual | 10d |  |  | Chen |
| 187 | 9.3.3 | Development | manual | 40d |  |  | Chen |
| 188 | 9.3.4 | **QA & Testing** |  | 0d | 2020-12-01 | 2020-12-01 | QA |
| 189 | 9.3.4.1 | Write testing documents | manual | 5d |  |  | QA |
| 190 | 9.3.4.2 | Testing | manual | 20d |  |  | QA |
| 191 | 9.3.4.3 | Fixes & Improvements | manual | 20d |  |  | Chen |
| 193 | 11 | **Data Archiving and Accessibility (1.6) [Software]** |  | 0d | 2020-12-01 | 2020-12-01 |  |
| 194 | 11.1 | **Databases & Archives** |  | 0d | 2020-12-01 | 2020-12-01 |  |
| 195 | 11.1.1 | Requirements and design | manual | 10d |  |  | Yossi |
| 196 | 11.1.2 | Development | manual | 40d |  |  | Chen |
| 197 | 11.1.3 | **QA & Testing** |  | 0d | 2020-12-01 | 2020-12-01 |  |
| 198 | 11.1.3.1 | Write testing documents | manual | 5d |  |  | QA |
| 199 | 11.1.3.2 | Testing | manual | 20d |  |  | QA |
| 200 | 11.1.3.3 | Fixes & Improvements | manual | 20d |  |  | Chen |

| ID | WBS | Task | Type | Duration | Start | Finish | Resources |
| --- | --- | --- | --- | --- | --- | --- | --- |
| 202 | 11.3 | **Products Access** |  | 0d | 2020-12-01 | 2020-12-01 |  |
| 203 | 11.3.1 | Requirements and design | manual | 10d |  |  | Yossi |
| 204 | 11.3.2 | Development (WebApp & MobileApp) | manual | 80d |  |  | Chen |
| 205 | 11.3.3 | Additional tools design and development (Signal-to-Noise, etc.) | manual | 80d |  |  | Chen |
| 206 | 11.3.4 | **QA & Testing** |  | 0d | 2020-12-01 | 2020-12-01 |  |
| 207 | 11.3.4.1 | Write testing documents and procedures | manual | 5d |  |  | QA |
| 208 | 11.3.4.2 | Testing | manual | 20d |  |  | QA |
| 209 | 11.3.4.3 | Fixed & Improvements | manual | 20d |  |  | Chen |
| 211 | 11.5 | **Alerts Access** |  | 0d | 2020-12-01 | 2020-12-01 |  |
| 212 | 11.5.1 | Requirements and design | manual | 0d | 2020-12-01 | 2020-12-01 | Yossi |
| 213 | 11.5.2 | Development - Handle incoming alerts | manual | 10d |  |  | Chen |
| 214 | 11.5.3 | Development - Outgoing alerts | manual | 10d |  |  | Chen |
| 215 | 11.5.4 | Development (WebApp & MobileApp) | manual | 20d |  |  | Chen |
| 216 | 11.5.5 | **QA & Testing** |  | 0d | 2020-12-01 | 2020-12-01 |  |
| 217 | 11.5.5.1 | Write testing documents and procedures | manual | 5d |  |  | QA |
| 218 | 11.5.5.2 | Testing | manual | 10d |  |  | QA |
| 219 | 11.5.5.3 | Fixed & Improvements | manual | 10d |  |  | Chen |
| 221 | 11.7 | **Partial Pipeline** |  | 0d | 2020-12-01 | 2020-12-01 |  |
| 222 | 11.7.1 | Requirements and design | manual | 0d | 2020-12-01 | 2020-12-01 | Eran |
| 223 | 11.7.2 | Development | manual | 0d | 2020-12-01 | 2020-12-01 | Eran |
| 224 | 11.7.3 | Development | manual | 0d | 2020-12-01 | 2020-12-01 | Chen |
| 225 | 11.7.4 | **QA & Testing** |  | 0d | 2020-12-01 | 2020-12-01 |  |
| 226 | 11.7.4.1 | Testing | manual | 0d | 2020-12-01 | 2020-12-01 | QA |
| 227 | 11.7.4.2 | Fixed & Improvements | manual | 0d | 2020-12-01 | 2020-12-01 | Eran |
| 228 | 11.7.4.3 | Fixed & Improvements | manual | 0d | 2020-12-01 | 2020-12-01 | Chen |

| ID | WBS | Task | Type | Duration | Start | Finish | Resources |
| --- | --- | --- | --- | --- | --- | --- | --- |
| 230 | 13 | **SOC System Management (1.7) [Software]** |  | 0d | 2020-12-01 | 2020-12-01 |  |
| 232 | 13.2 | **SW & HW Infrastructure Architecture** |  | 0d | 2020-12-01 | 2020-12-01 |  |
| 233 | 13.2.1 | Requirements and design | manual | 0d | 2020-12-01 | 2020-12-01 | Team |
| 236 | 13.5 | **Internal & External Interfaces [Development]** |  | 0d | 2020-12-01 | 2020-12-01 |  |
| 237 | 13.5.1 | IAI | manual | 0d | 2020-12-01 | 2020-12-01 |  |
| 239 | 13.5.3 | DESY | manual | 0d | 2020-12-01 | 2020-12-01 |  |
| 241 | 13.5.5 | NASA | manual | 0d | 2020-12-01 | 2020-12-01 |  |
| 243 | 13.5.7 | Public | manual | 0d | 2020-12-01 | 2020-12-01 |  |
| 246 | 13.8 | **SOC HMI Concept (GUI)** |  | 0d | 2020-12-01 | 2020-12-01 |  |
| 247 | 13.8.1 | Design - Functional requirements | manual | 5d |  |  | Chen |
| 248 | 13.8.2 | Design - UX | manual | 10d |  |  | Chen |
| 249 | 13.8.3 | Evaluation and improvements | manual | 5d |  |  | Team |
| 251 | 13.10 | **Cyber - Requirements and Implementation (VPN in most cases)** |  | 0d | 2020-12-01 | 2020-12-01 |  |
| 252 | 13.10.1 | IAI | manual | 5d |  |  | Lior |
| 253 | 13.10.2 | DESY | manual | 5d |  |  | Lior |
| 254 | 13.10.3 | NASA | manual | 5d |  |  | Lior |
| 255 | 13.10.4 | LSST | manual | 5d |  |  | Lior |
| 256 | 13.10.5 | Public | manual | 5d |  |  | Lior |
| 258 | 13.12 | **Procedures and Rule Engine [Development]** |  | 0d | 2020-12-01 | 2020-12-01 |  |
| 259 | 13.12.1 | Alerts | manual | 5d |  |  | Chen |
| 260 | 13.12.2 | Target of Opportunity | manual | 5d |  |  | Chen |
| 261 | 13.12.3 | Transients | manual | 5d |  |  | Chen |
| 262 | 13.12.4 | Task Scheduler | manual | 5d |  |  | Chen |
| 263 | 13.12.5 | Pending tasks | manual | 5d |  |  | Chen |

| ID | WBS | Task | Type | Duration | Start | Finish | Resources |
| --- | --- | --- | --- | --- | --- | --- | --- |
| 264 | 13.12.6 | **QA & Testing** |  | 0d | 2020-12-01 | 2020-12-01 |  |
| 265 | 13.12.6.1 | Write testing documents and procedures | manual | 5d |  |  | QA |
| 266 | 13.12.6.2 | Testing | manual | 10d |  |  | QA |
| 267 | 13.12.6.3 | Fixed & Improvements | manual | 10d |  |  | Chen |
| 268 | 13.13 | System Monitoring | manual | 0d | 2020-12-01 | 2020-12-01 |  |
| 271 | 13.16 | **QA & Testing** |  | 0d | 2020-12-01 | 2020-12-01 |  |
| 272 | 13.16.1 | Write testing documents and procedures | manual | 5d |  |  | QA |
| 273 | 13.16.2 | Testing | manual | 10d |  |  | QA |
| 274 | 13.16.3 | Fixed & Improvements | manual | 10d |  |  | Chen |
| 276 | 13.18 | **Component Testing** |  | 0d | 2020-12-01 | 2020-12-01 |  |
| 277 | 13.18.1 | **QA & Testing** |  | 0d | 2020-12-01 | 2020-12-01 |  |
| 278 | 13.18.1.1 | Write testing documents and procedures | manual | 5d |  |  | QA |
| 279 | 13.18.1.2 | Testing | manual | 10d |  |  | QA |
| 280 | 13.18.1.3 | Fixed & Improvements | manual | 10d |  |  | Chen |
| 282 | 15 | **QA & Integration + Acceptance Tests (1.9)** |  | 0d | 2020-12-01 | 2020-12-01 |  |
| 283 | 15.1 | **SOC Internal - Software Component** |  | 0d | 2020-12-01 | 2020-12-01 |  |
| 284 | 15.1.1 | **QA & Testing** |  | 0d | 2020-12-01 | 2020-12-01 |  |
| 285 | 15.1.1.1 | Write testing documents and procedures | manual | 5d |  |  | QA |
| 286 | 15.1.1.2 | Testing | manual | 10d |  |  | QA |
| 287 | 15.1.1.3 | Fixed & Improvements | manual | 10d |  |  | Chen |
| 289 | 15.3 | **SOC Internal - SOC Components Integration (HW+SW)** |  | 0d | 2020-12-01 | 2020-12-01 |  |
| 290 | 15.3.1 | **QA & Testing** |  | 0d | 2020-12-01 | 2020-12-01 |  |
| 291 | 15.3.1.1 | Write testing documents and procedures | manual | 5d |  |  | QA |
| 292 | 15.3.1.2 | Testing | manual | 10d |  |  | QA |
| 293 | 15.3.1.3 | Fixed & Improvements | manual | 10d |  |  | Chen |

| ID | WBS | Task | Type | Duration | Start | Finish | Resources |
| --- | --- | --- | --- | --- | --- | --- | --- |
| 295 | 15.5 | **SOC External - IAI** |  | 0d | 2020-12-01 | 2020-12-01 |  |
| 296 | 15.5.1 | Write integration documents | manual | 0d | 2020-12-01 | 2020-12-01 | QA |
| 297 | 15.5.2 | Design automation & manual testing | manual | 0d | 2020-12-01 | 2020-12-01 | QA |
| 298 | 15.5.3 | Develop automation & simulations | manual | 0d | 2020-12-01 | 2020-12-01 |  |
| 299 | 15.5.4 | Run automation | manual | 0d | 2020-12-01 | 2020-12-01 | QA |
| 300 | 15.5.5 | Perform manual testing | manual | 0d | 2020-12-01 | 2020-12-01 | QA |
| 301 | 15.5.6 | Fixes and improvements | manual | 0d | 2020-12-01 | 2020-12-01 |  |
| 302 | 15.5.7 | Acceptance tests | manual | 0d | 2020-12-01 | 2020-12-01 |  |
| 304 | 15.7 | **SOC External - DESY** |  | 0d | 2020-12-01 | 2020-12-01 |  |
| 305 | 15.7.1 | Write integration documents | manual | 0d | 2020-12-01 | 2020-12-01 | QA |
| 306 | 15.7.2 | Design automation & manual testing | manual | 0d | 2020-12-01 | 2020-12-01 | QA |
| 307 | 15.7.3 | Develop automation & simulations | manual | 0d | 2020-12-01 | 2020-12-01 |  |
| 308 | 15.7.4 | Run automation | manual | 0d | 2020-12-01 | 2020-12-01 | QA |
| 309 | 15.7.5 | Perform manual testing | manual | 0d | 2020-12-01 | 2020-12-01 | QA |
| 310 | 15.7.6 | Fixes and improvements | manual | 0d | 2020-12-01 | 2020-12-01 |  |
| 311 | 15.7.7 | Acceptance tests | manual | 0d | 2020-12-01 | 2020-12-01 |  |
| 314 | 15.10 | **SOC External - NASA** |  | 0d | 2020-12-01 | 2020-12-01 |  |
| 315 | 15.10.1 | Write integration documents | manual | 0d | 2020-12-01 | 2020-12-01 | QA |
| 316 | 15.10.2 | Design automation & manual testing | manual | 0d | 2020-12-01 | 2020-12-01 | QA |
| 317 | 15.10.3 | Develop automation & simulations | manual | 0d | 2020-12-01 | 2020-12-01 |  |
| 318 | 15.10.4 | Run automation | manual | 0d | 2020-12-01 | 2020-12-01 | QA |
| 319 | 15.10.5 | Perform manual testing | manual | 0d | 2020-12-01 | 2020-12-01 | QA |
| 320 | 15.10.6 | Fixes and improvements | manual | 0d | 2020-12-01 | 2020-12-01 |  |
| 321 | 15.10.7 | Acceptance tests | manual | 0d | 2020-12-01 | 2020-12-01 |  |

| ID | WBS | Task | Type | Duration | Start | Finish | Resources |
| --- | --- | --- | --- | --- | --- | --- | --- |
| 323 | 15.12 | **SOC External - LSST** |  | 0d | 2020-12-01 | 2020-12-01 |  |
| 324 | 15.12.1 | Write integration documents | manual | 0d | 2020-12-01 | 2020-12-01 | QA |
| 325 | 15.12.2 | Design automation & manual testing | manual | 0d | 2020-12-01 | 2020-12-01 | QA |
| 326 | 15.12.3 | Develop automation & simulations | manual | 0d | 2020-12-01 | 2020-12-01 |  |
| 327 | 15.12.4 | Run automation | manual | 0d | 2020-12-01 | 2020-12-01 | QA |
| 328 | 15.12.5 | Perform manual testing | manual | 0d | 2020-12-01 | 2020-12-01 | QA |
| 329 | 15.12.6 | Fixes and improvements | manual | 0d | 2020-12-01 | 2020-12-01 |  |
| 330 | 15.12.7 | Acceptance tests | manual | 0d | 2020-12-01 | 2020-12-01 |  |
| 332 | 17 | **Training and Documentation (1.10)** |  | 0d | 2020-12-01 | 2020-12-01 |  |
| 333 | 17.1 | **SOC Operation Simulator Development** |  | 0d | 2020-12-01 | 2020-12-01 |  |
| 334 | 17.1.1 | Requirements and design | manual | 0d | 2020-12-01 | 2020-12-01 |  |
| 335 | 17.1.2 | Write scenarios | manual | 0d | 2020-12-01 | 2020-12-01 |  |
| 336 | 17.1.3 | Software design | manual | 0d | 2020-12-01 | 2020-12-01 |  |
| 337 | 17.1.4 | Software development | manual | 0d | 2020-12-01 | 2020-12-01 |  |
| 338 | 17.1.5 | Evaluation | manual | 0d | 2020-12-01 | 2020-12-01 |  |
| 339 | 17.2 | **QA & Testing** |  | 0d | 2020-12-01 | 2020-12-01 |  |
| 340 | 17.2.1 | Write testing documents and procedures | manual | 5d |  |  | QA |
| 341 | 17.2.2 | Testing | manual | 10d |  |  | QA |
| 342 | 17.2.3 | Fixed & Improvements | manual | 10d |  |  | Chen |
| 344 | 17.4 | **Documentation** |  | 0d | 2020-12-01 | 2020-12-01 |  |
| 345 | 17.4.1 | Write operating procedures | manual | 0d | 2020-12-01 | 2020-12-01 |  |
| 346 | 17.4.2 | Write troubleshooting procedures | manual | 0d | 2020-12-01 | 2020-12-01 |  |
| 347 | 17.4.3 | Write maintenance procedures | manual | 0d | 2020-12-01 | 2020-12-01 |  |
| 349 | 17.6 | **Training Materials** |  | 0d | 2020-12-01 | 2020-12-01 |  |
| 350 | 17.6.1 | Write training docuements | manual | 0d | 2020-12-01 | 2020-12-01 | TechWriter |

| ID | WBS | Task | Type | Duration | Start | Finish | Resources |
| --- | --- | --- | --- | --- | --- | --- | --- |
| 353 | 17.9 | **Help Desk (originally in 1.3.3)** |  | 0d | 2020-12-01 | 2020-12-01 |  |
| 354 | 17.9.1 | Requirements | manual | 0d | 2020-12-01 | 2020-12-01 |  |
| 355 | 17.9.2 | Research available products (Check UVDesk) | manual | 0d | 2020-12-01 | 2020-12-01 | Chen |
| 356 | 17.9.3 | Functional design | manual | 0d | 2020-12-01 | 2020-12-01 |  |
| 357 | 17.9.4 | Write procedures | manual | 0d | 2020-12-01 | 2020-12-01 |  |
| 358 | 17.9.5 | Develop plugins if required (Optional) | manual | 0d | 2020-12-01 | 2020-12-01 | Chen |
| 359 | 17.9.6 | Write training materials | manual | 0d | 2020-12-01 | 2020-12-01 |  |
| 360 | 17.9.7 | Evaluation | manual | 0d | 2020-12-01 | 2020-12-01 |  |
