# ULTRASAT Gantt

Schedule from MS Project XML, 2020-12-01 to 2025-05-01, A marks actual dates.

## Calendars

- Standard: Mon-Thu 08:00-12:00, 13:00-17:00; Fri-Sat off; Sun 08:00-12:00, 13:00-17:00.

## Resources

| Resource |
| --- |
| Eran |
| Sagi |
| Puzzle |
| Lior |
| Yossi |
| QA |
| Team |
| TechWriter |
| Chen |

## Schedule

| ID | WBS | Task | Duration | Start | Finish | Predecessors | Complete | Remaining | Constraint | Resources | Text1 |
| --- | --- | --- | --- | --- | --- | --- | --- | --- | --- | --- | --- |
| 1 | 1 | **Project Management (1.1)** | 1067d | 2020-12-01 A | 2025-01-01 |  | 4% | 1024.32d | start no earlier than 2020-12-01 |  |  |
| 2 | 1.1 | **System Engineering** | 153d | 2020-12-01 A | 2021-07-01 |  | 59% | 62.73d |  |  |  |
| 3 | 1.1.1 | General design (Puzzle documents) | 65d | 2020-12-01 A | 2021-03-01 |  | 100% |  |  | Puzzle | Complete |
| 4 | 1.1.2 | Project timeline planning | 46d | 2021-05-01 | 2021-07-01 |  |  |  |  | Lior |  |
| 6 | 1.3 | **Integrated Logistic Support (ILS) = Project Maintenance Plan** | 696d | 2021-04-01 | 2023-11-30 |  |  |  |  |  |  |
| 7 | 1.3.1 | Collect information | 261d | 2021-04-01 | 2022-03-31 |  |  |  |  | Lior |  |
| 8 | 1.3.2 | Design | 262d | 2021-06-01 | 2022-06-01 |  |  |  |  | Lior |  |
| 9 | 1.3.3 | Write documents and procedures | 262d | 2022-06-02 | 2023-06-04 | 8 |  |  |  | Lior |  |
| 10 | 1.3.4 | Write documentation for system parts | 131d | 2023-06-01 | 2023-11-30 |  |  |  |  |  |  |
| 12 | 1.5 | **SOC Standard Operating Procedure (SOP) & Training** | 566d | 2021-05-01 | 2023-06-29 |  |  |  |  |  |  |
| 13 | 1.5.1 | Collect information | 262d | 2021-05-01 | 2022-05-01 |  |  |  |  | Lior |  |
| 14 | 1.5.2 | Design | 44d | 2022-05-01 | 2022-06-29 |  |  |  |  | Lior |  |
| 15 | 1.5.3 | Write SOC operating procedures | 261d | 2022-07-01 | 2023-06-29 |  |  |  |  | Lior |  |
| 16 | 1.5.4 | Write SOC training materials | 261d | 2022-07-01 | 2023-06-29 |  |  |  |  | Lior |  |
| 18 | 1.7 | **Architectural Design** | 101d | 2021-05-01 | 2021-09-16 |  |  |  |  |  |  |
| 19 | 1.7.1 | **Current Building** | 35d | 2021-05-01 | 2021-06-16 |  |  |  |  |  |  |
| 20 | 1.7.1.1 | Comm | 35d | 2021-05-01 | 2021-06-16 |  |  |  |  |  |  |
| 21 | 1.7.1.2 | SOC | 35d | 2021-05-01 | 2021-06-16 |  |  |  |  |  |  |
| 22 | 1.7.1.3 | Offices | 35d | 2021-05-01 | 2021-06-16 |  |  |  |  |  |  |
| 23 | 1.7.2 | **New Building** | 101d | 2021-05-01 | 2021-09-16 |  |  |  |  |  |  |
| 24 | 1.7.2.1 | Comm | 101d | 2021-05-01 | 2021-09-16 |  |  |  |  |  |  |
| 25 | 1.7.2.2 | SOC | 101d | 2021-05-01 | 2021-09-16 |  |  |  |  |  |  |
| 26 | 1.7.2.3 | Offices | 101d | 2021-05-01 | 2021-09-16 |  |  |  |  |  |  |
| 28 | 1.9 | **Hardware Procurement** | 960d | 2021-05-01 | 2025-01-01 |  |  |  |  | Lior |  |
| 29 | 1.9.1 | **Comm (Servers, Storage, Network) Room** | 566d | 2021-05-01 | 2023-06-29 |  |  |  |  | Lior |  |
| 30 | 1.9.1.1 | Specifications | 22d | 2023-01-01 | 2023-01-30 |  |  |  |  | Lior |  |
| 31 | 1.9.1.2 | Servers - Primary & Backup | 87d | 2023-01-01 | 2023-05-01 |  |  |  |  | Lior |  |
| 32 | 1.9.1.3 | Storage - Primary & Backup | 130d | 2023-01-01 | 2023-06-29 |  |  |  |  | Lior |  |
| 33 | 1.9.1.4 | Racks, Switches, Etc. | 130d | 2023-01-01 | 2023-06-29 |  |  |  |  |  |  |
| 34 | 1.9.1.5 | Comm, Elect, A/C (Check with Hemda) | 67d | 2021-05-01 | 2021-08-01 |  |  |  |  | Lior |  |

| ID | WBS | Task | Duration | Start | Finish | Constraint | Resources |
| --- | --- | --- | --- | --- | --- | --- | --- |
| 35 | 1.9.2 | **SOC** | 132d | 2023-01-01 | 2023-07-03 |  | Lior |
| 36 | 1.9.2.1 | Specifications | 22d | 2023-01-01 | 2023-01-30 |  |  |
| 37 | 1.9.2.2 | Workstations | 132d | 2023-01-01 | 2023-07-03 |  |  |
| 38 | 1.9.2.3 | Monitors (Wall + Desktop) | 132d | 2023-01-01 | 2023-07-03 |  |  |
| 39 | 1.9.3 | **Office** | 110d | 2023-01-01 | 2023-06-01 |  | Lior |
| 40 | 1.9.3.1 | Specifications | 1d | 2023-01-01 | 2023-01-01 |  |  |
| 41 | 1.9.3.2 | Workstations | 110d | 2023-01-01 | 2023-06-01 |  |  |
| 42 | 1.9.3.3 | Monitors | 110d | 2023-01-01 | 2023-06-01 |  |  |
| 43 | 1.9.4 | **New Building and Auditorium** | 263d | 2024-01-01 | 2025-01-01 |  |  |
| 44 | 1.9.4.1 | Specifications | 44d | 2024-01-01 | 2024-02-29 |  |  |
| 45 | 1.9.4.2 | Procurement - Comm, SOC, Office | 220d | 2024-03-01 | 2025-01-01 |  |  |
| 46 | 1.9.5 | **Misc** | 198d | 2023-04-01 | 2024-01-01 |  | Lior |
| 47 | 1.9.5.1 | Procurement of spare parts | 1d | 2024-01-01 | 2024-01-01 |  |  |
| 48 | 1.9.5.2 | Track procurement and manage installation | 1d | 2023-04-01 | 2023-04-01 |  |  |
| 50 | 3 | **Infrastructure (1.2)** | 1131d | 2021-01-01 | 2025-05-01 | start no earlier than 2021-01-01 |  |
| 51 | 3.1 | **Comm (Servers, Storage, Network) Room - Primary & Backup** | 676d | 2021-05-01 | 2023-11-30 |  | Lior |
| 52 | 3.1.1 | Passive (Cables, Connectors) | 67d | 2021-05-01 | 2021-08-01 |  |  |
| 53 | 3.1.2 | Active (Racks, Network switches, network connection) | 65d | 2023-01-01 | 2023-03-30 |  |  |
| 54 | 3.1.3 | **Installation and Setup** | 131d | 2023-06-01 | 2023-11-30 |  |  |
| 55 | 3.1.3.1 | Servers installation & configuration | 88d | 2023-06-01 | 2023-10-02 |  |  |
| 56 | 3.1.3.2 | Storage installation & configuration | 88d | 2023-08-01 | 2023-11-30 |  |  |
| 57 | 3.1.3.3 | Network setup | 88d | 2023-08-01 | 2023-11-30 |  |  |
| 58 | 3.1.3.4 | Server, Storage, Network - Evaluation | 66d | 2023-09-01 | 2023-11-30 |  |  |
| 59 | 3.2 | **SOC Room** | 481d | 2021-05-01 | 2023-03-02 |  |  |
| 60 | 3.2.1 | Passive (Cables, Connectors) | 67d | 2021-05-01 | 2021-08-01 |  |  |
| 61 | 3.2.2 | Active (Racks, Network switches, network connection) | 45d | 2023-01-01 | 2023-03-02 |  |  |
| 62 | 3.2.3 | Multimedia - Monitors, Matrix | 45d | 2023-01-01 | 2023-03-02 |  |  |

| ID | WBS | Task | Duration | Start | Finish | Predecessors | Constraint | Resources |
| --- | --- | --- | --- | --- | --- | --- | --- | --- |
| 63 | 3.3 | **Visitor Center - New Building - TBD** | 87d | 2025-01-01 | 2025-05-01 |  |  |  |
| 64 | 3.3.1 | Passive (Racks, Cables, Connectors) | 87d | 2025-01-01 | 2025-05-01 |  |  |  |
| 65 | 3.3.2 | Active (Network switches, network connection) | 87d | 2025-01-01 | 2025-05-01 |  |  |  |
| 66 | 3.3.3 | Multimedia | 87d | 2025-01-01 | 2025-05-01 |  |  |  |
| 67 | 3.4 | **WIS Network Requirements** | 566d | 2021-05-01 | 2023-06-29 |  |  |  |
| 68 | 3.4.1 | Write detailed specifications for the hardware and networking components | 90d | 2021-05-01 | 2021-09-01 |  |  |  |
| 69 | 3.4.2 | Network installation and setup | 500d | 2021-08-01 | 2023-06-29 |  |  |  |
| 70 | 3.5 | **Secured Interfaces to IAI (see also Cyber)** | 326d | 2021-01-01 | 2022-03-31 |  |  |  |
| 71 | 3.5.1 | **Communication** | 66d | 2022-01-01 | 2022-03-31 |  |  | Lior |
| 72 | 3.5.1.1 | Fiber / ADSL / Redundancy | 44d | 2022-01-01 | 2022-03-01 |  |  | Lior |
| 73 | 3.5.1.2 | IPSec / Cyber / Firewall / VPN | 44d | 2022-01-01 | 2022-03-01 |  |  | Lior |
| 74 | 3.5.1.3 | Integration & Testing | 23d | 2022-03-01 | 2022-03-31 |  |  | Lior |
| 75 | 3.5.2 | Protocol specifications with IAI - XML etc. | 284d | 2021-01-01 | 2022-02-01 |  |  | Yossi |
| 76 | 3.6 | **Secured WEB Interfaces (see also Cyber)** | 154d | 2022-01-01 | 2022-08-02 |  |  |  |
| 77 | 3.6.1 | Specifications | 110d | 2022-01-01 | 2022-06-01 |  |  | Lior |
| 78 | 3.6.2 | Check cyber aspects | 110d | 2022-01-01 | 2022-06-01 |  |  | Lior |
| 79 | 3.6.3 | Procurement | 44d | 2022-06-02 | 2022-08-02 | 78 |  | Lior |
| 81 | 5 | **Observation, Operation, Management, Control (1.3) [Software]** | 371d | 2021-04-01 | 2022-09-01 |  | start no earlier than 2021-04-01 |  |
| 82 | 5.1 | **Operations - SOC Command & Control** | 305d | 2021-04-01 | 2022-06-01 |  |  |  |
| 83 | 5.1.1 | Functional design | 196d | 2021-04-01 | 2021-12-30 |  |  | Chen |
| 84 | 5.1.2 | Software design | 196d | 2021-04-01 | 2021-12-30 |  |  | Chen |
| 85 | 5.1.3 | GUI design | 176d | 2021-05-01 | 2021-12-30 |  |  | Chen |
| 86 | 5.1.4 | Design Review | 1d | 2021-12-30 | 2021-12-30 |  |  |  |
| 87 | 5.1.5 | Software development | 109d | 2022-01-01 | 2022-05-31 |  |  | Chen |

| ID | WBS | Task | Duration | Start | Finish | Constraint | Resources |
| --- | --- | --- | --- | --- | --- | --- | --- |
| 88 | 5.1.6 | **QA & Testing** | 67d | 2022-03-01 | 2022-06-01 |  |  |
| 89 | 5.1.6.1 | Testing | 67d | 2022-03-01 | 2022-06-01 |  | QA |
| 90 | 5.1.6.2 | Fixes & Improvements | 67d | 2022-03-01 | 2022-06-01 |  | Chen |
| 91 | 5.1.7 | Delivery Review | 1d | 2022-06-01 | 2022-06-01 |  |  |
| 93 | 5.3 | **Observation Planning** | 351d | 2021-05-01 | 2022-09-01 |  |  |
| 94 | 5.3.1 | Functional design | 176d | 2021-05-01 | 2021-12-30 |  | Yossi |
| 95 | 5.3.2 | Software design | 87d | 2021-09-01 | 2021-12-30 |  | Chen |
| 96 | 5.3.3 | GUI design | 66d | 2021-09-01 | 2021-12-01 |  | Chen |
| 97 | 5.3.4 | Design Review | 1d | 2021-12-30 | 2021-12-30 |  |  |
| 98 | 5.3.5 | Algorithms development | 66d | 2022-01-01 | 2022-03-31 |  | Eran |
| 99 | 5.3.6 | Software development | 66d | 2022-01-01 | 2022-03-31 |  | Chen |
| 100 | 5.3.7 | GUI development - Desktop / Web | 67d | 2022-05-01 | 2022-08-01 |  | Chen |
| 101 | 5.3.8 | **QA & Testing** | 67d | 2022-06-01 | 2022-09-01 |  |  |
| 102 | 5.3.8.1 | Testing | 67d | 2022-06-01 | 2022-09-01 |  | QA |
| 103 | 5.3.8.2 | Fixes & Improvements | 67d | 2022-06-01 | 2022-09-01 |  | Chen |
| 104 | 5.3.9 | Delivery Review | 1d | 2022-06-01 | 2022-06-01 |  |  |
| 107 | 7 | **External Interfaces (1.4) - [Software]** | 523d | 2021-12-30 | 2024-01-01 | start no earlier than 2021-12-30 |  |
| 108 | 7.1 | **IAI Interface** | 261d | 2021-12-30 | 2022-12-29 |  |  |
| 109 | 7.1.1 | Complete protocol specifications with IAI-GCS | 22d | 2022-02-01 | 2022-03-02 |  | Yossi |
| 110 | 7.1.2 | Design Review | 1d | 2021-12-30 | 2021-12-30 |  |  |
| 111 | 7.1.3 | Develop Incoming images handling - from IAI to Pipeline | 261d | 2022-01-01 | 2022-12-29 |  | Chen |
| 112 | 7.1.4 | Develop Metadata handling - from IAI to Pipeline and Managers | 261d | 2022-01-01 | 2022-12-29 |  | Chen |
| 113 | 7.1.5 | Develop Command & Control aspects | 261d | 2022-01-01 | 2022-12-29 |  | Chen |
| 114 | 7.1.6 | Develop Simulators and testing tools | 261d | 2022-01-01 | 2022-12-29 |  | Chen |

| ID | WBS | Task | Duration | Start | Finish | Resources |
| --- | --- | --- | --- | --- | --- | --- |
| 115 | 7.1.7 | **QA & Testing** | 218d | 2022-03-01 | 2022-12-29 | QA |
| 116 | 7.1.7.1 | Testing specifications | 1d | 2022-03-01 | 2022-03-01 | QA |
| 117 | 7.1.7.2 | Testing | 1d | 2022-04-01 | 2022-04-01 | QA |
| 118 | 7.1.7.3 | Fixes & Improvements | 196d | 2022-04-01 | 2022-12-29 | Chen |
| 119 | 7.2 | Delivery Review | 1d | 2022-06-01 | 2022-06-01 |  |
| 121 | 7.4 | **NASA Interface** | 262d | 2022-06-01 | 2023-06-01 |  |
| 122 | 7.4.1 | **Communication - Infrastructure** | 110d | 2022-08-01 | 2023-01-01 | Lior |
| 123 | 7.4.1.1 | Fiber / ADSL / Redundancy | 89d | 2022-08-01 | 2022-12-01 | Lior |
| 124 | 7.4.1.2 | IPSec / Cyber / Firewall | 89d | 2022-08-01 | 2022-12-01 | Lior |
| 125 | 7.4.1.3 | Integration & Testing | 22d | 2022-12-01 | 2023-01-01 | QA |
| 126 | 7.4.2 | Design - requirements, protocols, access | 153d | 2022-06-01 | 2023-01-01 | Yossi |
| 127 | 7.4.3 | Design Review | 1d | 2022-12-30 | 2022-12-30 |  |
| 128 | 7.4.4 | Development | 110d | 2023-01-01 | 2023-06-01 | Chen |
| 129 | 7.4.5 | **QA & Testing** | 87d | 2023-02-01 | 2023-06-01 | QA |
| 130 | 7.4.5.1 | Write testing documents | 21d | 2023-02-01 | 2023-03-01 |  |
| 131 | 7.4.5.2 | Testing | 67d | 2023-03-01 | 2023-06-01 | QA |
| 132 | 7.4.5.3 | Fixes & Improvements | 67d | 2023-03-01 | 2023-06-01 | Chen |
| 133 | 7.5 | Delivery Review | 1d | 2024-01-01 | 2024-01-01 |  |
| 135 | 7.7 | **DESY Interface** | 217d | 2022-06-01 | 2023-03-30 |  |
| 136 | 7.7.1 | **Communication - Infrastructure** | 109d | 2022-08-01 | 2022-12-29 | Lior |
| 137 | 7.7.1.1 | Fiber / ADSL / Redundancy | 89d | 2022-08-01 | 2022-12-01 | Lior |
| 138 | 7.7.1.2 | IPSec / Cyber / Firewall | 89d | 2022-08-01 | 2022-12-01 | Lior |
| 139 | 7.7.1.3 | Integration & Testing | 21d | 2022-12-01 | 2022-12-29 | QA |
| 140 | 7.7.2 | Design - requirements, protocols, access | 153d | 2022-06-01 | 2023-01-01 | Yossi |
| 141 | 7.7.3 | Design Review | 1d | 2022-12-30 | 2022-12-30 |  |
| 142 | 7.7.4 | Development | 65d | 2023-01-01 | 2023-03-30 | Chen |

| ID | WBS | Task | Type | Duration | Start | Finish | Constraint | Resources | Text1 |
| --- | --- | --- | --- | --- | --- | --- | --- | --- | --- |
| 143 | 7.7.5 | **QA & Testing** |  | 44d | 2023-01-01 | 2023-03-01 |  | QA |  |
| 144 | 7.7.5.1 | Write testing documents |  | 24d | 2023-01-01 | 2023-02-01 |  | QA |  |
| 145 | 7.7.5.2 | Testing |  | 21d | 2023-02-01 | 2023-03-01 |  | QA |  |
| 146 | 7.7.5.3 | Fixes & Improvements |  | 21d | 2023-02-01 | 2023-03-01 |  | Chen |  |
| 147 | 7.8 | Delivery Review |  | 1d | 2024-01-01 | 2024-01-01 |  |  |  |
| 149 | 7.10 | **LSST Interface** |  | 183d | 2022-08-01 | 2023-04-12 |  |  |  |
| 150 | 7.10.1 | **Communication - Infrastructure** |  | 109d | 2022-08-01 | 2022-12-29 |  | Lior |  |
| 151 | 7.10.1.1 | Fiber / ADSL / Redundancy |  | 89d | 2022-08-01 | 2022-12-01 |  | Lior |  |
| 152 | 7.10.1.2 | IPSec / Cyber / Firewall |  | 89d | 2022-08-01 | 2022-12-01 |  | Lior |  |
| 153 | 7.10.1.3 | Integration & Testing |  | 21d | 2022-12-01 | 2022-12-29 |  | QA |  |
| 154 | 7.10.2 | Design - requirements, protocols, access | manual | 10d |  |  |  | Yossi |  |
| 155 | 7.10.3 | Design Review |  | 1d | 2022-12-30 | 2022-12-30 |  |  |  |
| 156 | 7.10.4 | Development |  | 20d | 2023-01-01 | 2023-01-26 |  | Chen |  |
| 157 | 7.10.5 | **QA & Testing** |  | 31d | 2023-03-01 | 2023-04-12 |  | QA |  |
| 158 | 7.10.5.1 | Write testing documents |  | 5d | 2023-03-01 | 2023-03-07 |  | Lior |  |
| 159 | 7.10.5.2 | Testing |  | 10d | 2023-04-01 | 2023-04-12 |  | QA |  |
| 160 | 7.10.5.3 | Fixes & Improvements |  | 10d | 2023-04-01 | 2023-04-12 |  | Chen |  |
| 161 | 7.11 | Delivery Review |  | 1d | 2024-01-01 | 2024-01-01 |  |  |  |
| 164 | 10 | **Image & Data Processing (1.5) [Software]** |  | 521d | 2021-01-01 | 2022-12-30 | start no earlier than 2021-01-01 |  |  |
| 165 | 10.1 | **Pipeline (MATLAB)** |  | 521d | 2021-01-01 | 2022-12-30 |  |  |  |
| 166 | 10.1.1 | Functional design |  | 240d | 2021-01-01 | 2021-12-01 |  | Eran | In Progress |
| 167 | 10.1.2 | Databases design |  | 240d | 2021-01-01 | 2021-12-01 |  | Eran | In Progress |
| 168 | 10.1.3 | AstroPack Packages/Class design |  | 198d | 2021-03-01 | 2021-12-01 |  | Eran | In Progress |
| 169 | 10.1.4 | Base classes (Header, Containers, etc) |  | 188d | 2021-03-15 | 2021-12-01 |  | Eran | In Progress |
| 170 | 10.1.5 | Base classes - Log, Database |  | 67d | 2021-03-01 | 2021-06-01 |  | Chen |  |
| 171 | 10.1.6 | Pipeline Manager |  | 67d | 2021-05-01 | 2021-08-01 |  | Chen |  |
| 172 | 10.1.7 | Phase 1: Single step process - From RawImage to Products | manual | 0d | 2020-12-01 | 2020-12-01 |  | Eran |  |
| 173 | 10.1.8 | GUI Design | manual | 0d | 2020-12-01 | 2020-12-01 |  |  |  |
| 175 | 10.1.10 | Design & Status Review |  | 1d | 2021-08-30 | 2021-08-30 |  |  |  |

| ID | WBS | Task | Type | Duration | Start | Finish | Constraint | Resources |
| --- | --- | --- | --- | --- | --- | --- | --- | --- |
| 176 | 10.1.11 | **Phase 2: LAST Project - Testcase** |  | 0d | 2020-12-01 | 2020-12-01 |  |  |
| 177 | 10.1.11.1 | Specifications | manual | 0d | 2020-12-01 | 2020-12-01 |  | Eran |
| 178 | 10.1.11.2 | Additional development | manual | 0d | 2020-12-01 | 2020-12-01 |  | Eran |
| 179 | 10.1.11.3 | Additional development | manual | 0d | 2020-12-01 | 2020-12-01 |  | Chen |
| 180 | 10.1.11.4 | QA & Testing | manual | 0d | 2020-12-01 | 2020-12-01 |  | Sagi |
| 181 | 10.1.11.5 | Fixes & Improvements | manual | 0d | 2020-12-01 | 2020-12-01 |  | Chen |
| 182 | 10.1.12 | LAST Delivery Review |  | 1d | 2022-12-30 | 2022-12-30 |  |  |
| 183 | 10.1.13 | Develop Pipeline GUI | manual | 10d |  |  |  | Chen |
| 184 | 10.1.14 | Pipeline Development | manual | 0d | 2020-12-01 | 2020-12-01 |  |  |
| 185 | 10.1.15 | **QA & Testing** |  | 0d | 2020-12-01 | 2020-12-01 |  | QA |
| 186 | 10.1.15.1 | Write testing documents | manual | 5d |  |  |  | QA |
| 187 | 10.1.15.2 | Testing | manual | 40d |  |  |  | QA |
| 188 | 10.1.15.3 | Fixes | manual | 20d |  |  |  | Eran |
| 189 | 10.1.16 | Source code documentation & help |  | 10d | 2021-12-01 | 2021-12-14 |  | Eran |
| 191 | 10.3 | **WIS Databases & Archives** |  | 1d | 2022-12-30 | 2022-12-30 |  |  |
| 192 | 10.3.1 | Specifications and design | manual | 5d |  |  |  | Yossi |
| 193 | 10.3.2 | Configurations - databases, replications, etc. | manual | 10d |  |  |  | Chen |
| 194 | 10.3.3 | Design Review |  | 1d | 2022-12-30 | 2022-12-30 |  |  |
| 195 | 10.3.4 | Development | manual | 40d |  |  |  | Chen |
| 196 | 10.3.5 | **QA & Testing** |  | 0d | 2020-12-01 | 2020-12-01 |  | QA |
| 197 | 10.3.5.1 | Write testing documents | manual | 5d |  |  |  | QA |
| 198 | 10.3.5.2 | Testing | manual | 20d |  |  |  | QA |
| 199 | 10.3.5.3 | Fixes & Improvements | manual | 20d |  |  |  | Chen |
| 201 | 12 | **Data Archiving and Accessibility (1.6) [Software]** |  | 1d | 2022-12-30 | 2022-12-30 | start no earlier than 2022-12-30 |  |
| 202 | 12.1 | **Databases & Archives** |  | 1d | 2022-12-30 | 2022-12-30 |  |  |
| 203 | 12.1.1 | Requirements and design | manual | 10d |  |  |  | Yossi |
| 204 | 12.1.2 | Design Review |  | 1d | 2022-12-30 | 2022-12-30 |  |  |
| 205 | 12.1.3 | Development | manual | 40d |  |  |  | Chen |

| ID | WBS | Task | Type | Duration | Start | Finish | Resources |
| --- | --- | --- | --- | --- | --- | --- | --- |
| 206 | 12.1.4 | **QA & Testing** |  | 0d | 2020-12-01 | 2020-12-01 |  |
| 207 | 12.1.4.1 | Write testing documents | manual | 5d |  |  | QA |
| 208 | 12.1.4.2 | Testing | manual | 20d |  |  | QA |
| 209 | 12.1.4.3 | Fixes & Improvements | manual | 20d |  |  | Chen |
| 211 | 12.3 | **Products Access** |  | 1d | 2022-12-30 | 2022-12-30 |  |
| 212 | 12.3.1 | Requirements and design | manual | 10d |  |  | Yossi |
| 213 | 12.3.2 | Design Review |  | 1d | 2022-12-30 | 2022-12-30 |  |
| 214 | 12.3.3 | Development (WebApp & MobileApp) | manual | 80d |  |  | Chen |
| 215 | 12.3.4 | Additional tools design and development (Signal-to-Noise, etc.) | manual | 80d |  |  | Chen |
| 216 | 12.3.5 | **QA & Testing** |  | 0d | 2020-12-01 | 2020-12-01 |  |
| 217 | 12.3.5.1 | Write testing documents and procedures | manual | 5d |  |  | QA |
| 218 | 12.3.5.2 | Testing | manual | 20d |  |  | QA |
| 219 | 12.3.5.3 | Fixed & Improvements | manual | 20d |  |  | Chen |
| 221 | 12.5 | **Alerts Access** |  | 1d | 2022-12-30 | 2022-12-30 |  |
| 222 | 12.5.1 | Requirements and design | manual | 0d | 2020-12-01 | 2020-12-01 | Yossi |
| 223 | 12.5.2 | Design Review |  | 1d | 2022-12-30 | 2022-12-30 |  |
| 224 | 12.5.3 | Development - Handle incoming alerts | manual | 10d |  |  | Chen |
| 225 | 12.5.4 | Development - Outgoing alerts | manual | 10d |  |  | Chen |
| 226 | 12.5.5 | Development (WebApp & MobileApp) | manual | 20d |  |  | Chen |
| 227 | 12.5.6 | **QA & Testing** |  | 0d | 2020-12-01 | 2020-12-01 |  |
| 228 | 12.5.6.1 | Write testing documents and procedures | manual | 5d |  |  | QA |
| 229 | 12.5.6.2 | Testing | manual | 10d |  |  | QA |
| 230 | 12.5.6.3 | Fixed & Improvements | manual | 10d |  |  | Chen |
| 232 | 12.7 | **Partial Pipeline** |  | 1d | 2022-12-30 | 2022-12-30 |  |
| 233 | 12.7.1 | Requirements and design | manual | 0d | 2020-12-01 | 2020-12-01 | Eran |
| 234 | 12.7.2 | Design Review |  | 1d | 2022-12-30 | 2022-12-30 |  |
| 235 | 12.7.3 | Algorithms Development | manual | 0d | 2020-12-01 | 2020-12-01 | Eran |
| 236 | 12.7.4 | Development | manual | 0d | 2020-12-01 | 2020-12-01 | Chen |

| ID | WBS | Task | Type | Duration | Start | Finish | Constraint | Resources |
| --- | --- | --- | --- | --- | --- | --- | --- | --- |
| 237 | 12.7.5 | **QA & Testing** |  | 0d | 2020-12-01 | 2020-12-01 |  |  |
| 238 | 12.7.5.1 | Testing | manual | 0d | 2020-12-01 | 2020-12-01 |  | QA |
| 239 | 12.7.5.2 | Fixed & Improvements | manual | 0d | 2020-12-01 | 2020-12-01 |  | Eran |
| 240 | 12.7.5.3 | Fixed & Improvements | manual | 0d | 2020-12-01 | 2020-12-01 |  | Chen |
| 242 | 14 | **SOC System Management (1.7) [Software]** |  | 1d | 2022-12-30 | 2022-12-30 | start no earlier than 2022-12-30 |  |
| 244 | 14.2 | **SW & HW Infrastructure Architecture** |  | 0d | 2020-12-01 | 2020-12-01 |  |  |
| 245 | 14.2.1 | Requirements and design | manual | 0d | 2020-12-01 | 2020-12-01 |  | Team |
| 248 | 14.5 | **Internal & External Interfaces [Development] - Remove - Duplicate with 1.4** |  | 0d | 2020-12-01 | 2020-12-01 |  |  |
| 249 | 14.5.1 | **IAI** |  | 0d | 2020-12-01 | 2020-12-01 |  |  |
| 250 | 14.5.1.1 | Detailed protocol specifications | manual | 0d | 2020-12-01 | 2020-12-01 |  |  |
| 253 | 14.5.4 | **DESY** |  | 0d | 2020-12-01 | 2020-12-01 |  |  |
| 254 | 14.5.4.1 | Detailed protocol specifications | manual | 0d | 2020-12-01 | 2020-12-01 |  |  |
| 257 | 14.5.7 | **NASA** |  | 0d | 2020-12-01 | 2020-12-01 |  |  |
| 258 | 14.5.7.1 | Detailed protocol specifications | manual | 0d | 2020-12-01 | 2020-12-01 |  |  |
| 260 | 14.5.9 | **Public** |  | 0d | 2020-12-01 | 2020-12-01 |  |  |
| 261 | 14.5.9.1 | Detailed protocol specifications | manual | 0d | 2020-12-01 | 2020-12-01 |  |  |
| 265 | 14.9 | **SOC HMI Concept (GUI)** |  | 1d | 2022-12-30 | 2022-12-30 |  |  |
| 266 | 14.9.1 | Design - Functional requirements | manual | 5d |  |  |  | Chen |
| 267 | 14.9.2 | Design - UX | manual | 10d |  |  |  | Chen |
| 268 | 14.9.3 | Design Review |  | 1d | 2022-12-30 | 2022-12-30 |  |  |
| 269 | 14.9.4 | Evaluation and improvements | manual | 5d |  |  |  | Team |
| 271 | 14.11 | **Cyber - Requirements and Implementation (VPN in most cases)** |  | 0d | 2020-12-01 | 2020-12-01 |  |  |
| 272 | 14.11.1 | IAI | manual | 5d |  |  |  | Lior |
| 273 | 14.11.2 | DESY | manual | 5d |  |  |  | Lior |
| 274 | 14.11.3 | NASA | manual | 5d |  |  |  | Lior |
| 275 | 14.11.4 | LSST | manual | 5d |  |  |  | Lior |
| 276 | 14.11.5 | Public | manual | 5d |  |  |  | Lior |

| ID | WBS | Task | Type | Duration | Start | Finish | Resources |
| --- | --- | --- | --- | --- | --- | --- | --- |
| 278 | 14.13 | **Procedures and Rule Engine [Development]** |  | 0d | 2020-12-01 | 2020-12-01 |  |
| 279 | 14.13.1 | Alerts | manual | 5d |  |  | Chen |
| 280 | 14.13.2 | Target of Opportunity | manual | 5d |  |  | Chen |
| 281 | 14.13.3 | Transients | manual | 5d |  |  | Chen |
| 282 | 14.13.4 | Task Scheduler | manual | 5d |  |  | Chen |
| 283 | 14.13.5 | Pending tasks | manual | 5d |  |  | Chen |
| 284 | 14.13.6 | **QA & Testing** |  | 0d | 2020-12-01 | 2020-12-01 |  |
| 285 | 14.13.6.1 | Write testing documents and procedures | manual | 5d |  |  | QA |
| 286 | 14.13.6.2 | Testing | manual | 10d |  |  | QA |
| 287 | 14.13.6.3 | Fixed & Improvements | manual | 10d |  |  | Chen |
| 289 | 14.15 | System Monitoring | manual | 0d | 2020-12-01 | 2020-12-01 |  |
| 292 | 14.18 | **QA & Testing** |  | 0d | 2020-12-01 | 2020-12-01 |  |
| 293 | 14.18.1 | Write testing documents and procedures | manual | 5d |  |  | QA |
| 294 | 14.18.2 | Testing | manual | 10d |  |  | QA |
| 295 | 14.18.3 | Fixed & Improvements | manual | 10d |  |  | Chen |
| 297 | 14.20 | **Component Testing** |  | 0d | 2020-12-01 | 2020-12-01 |  |
| 298 | 14.20.1 | **QA & Testing** |  | 0d | 2020-12-01 | 2020-12-01 |  |
| 299 | 14.20.1.1 | Write testing documents and procedures | manual | 5d |  |  | QA |
| 300 | 14.20.1.2 | Testing | manual | 10d |  |  | QA |
| 301 | 14.20.1.3 | Fixed & Improvements | manual | 10d |  |  | Chen |
| 303 | 16 | **QA & Integration + Acceptance Tests (1.9)** |  | 0d | 2020-12-01 | 2020-12-01 |  |
| 304 | 16.1 | **SOC Internal - Software Component** |  | 0d | 2020-12-01 | 2020-12-01 |  |
| 305 | 16.1.1 | **QA & Testing** |  | 0d | 2020-12-01 | 2020-12-01 |  |
| 306 | 16.1.1.1 | Write testing documents and procedures | manual | 10d |  |  | QA |
| 307 | 16.1.1.2 | Testing | manual | 10d |  |  | QA |
| 308 | 16.1.1.3 | Fixed & Improvements | manual | 10d |  |  | Chen |

| ID | WBS | Task | Type | Duration | Start | Finish | Resources |
| --- | --- | --- | --- | --- | --- | --- | --- |
| 310 | 16.3 | **SOC Internal - SOC Components Integration (HW+SW)** |  | 0d | 2020-12-01 | 2020-12-01 |  |
| 311 | 16.3.1 | **QA & Testing** |  | 0d | 2020-12-01 | 2020-12-01 |  |
| 312 | 16.3.1.1 | Write testing documents and procedures | manual | 5d |  |  | QA |
| 313 | 16.3.1.2 | Testing | manual | 10d |  |  | QA |
| 314 | 16.3.1.3 | Fixed & Improvements | manual | 10d |  |  | Chen |
| 316 | 16.5 | **SOC External - IAI** |  | 0d | 2020-12-01 | 2020-12-01 |  |
| 317 | 16.5.1 | Write integration documents | manual | 10d |  |  | QA |
| 318 | 16.5.2 | Design automation & manual testing | manual | 0d | 2020-12-01 | 2020-12-01 | QA |
| 319 | 16.5.3 | Develop automation & simulations | manual | 0d | 2020-12-01 | 2020-12-01 | QA |
| 320 | 16.5.4 | Run automation | manual | 0d | 2020-12-01 | 2020-12-01 | QA |
| 321 | 16.5.5 | Perform manual testing | manual | 0d | 2020-12-01 | 2020-12-01 | QA |
| 322 | 16.5.6 | Fixes and improvements | manual | 0d | 2020-12-01 | 2020-12-01 |  |
| 323 | 16.5.7 | Acceptance tests | manual | 0d | 2020-12-01 | 2020-12-01 |  |
| 325 | 16.7 | **SOC External - DESY** |  | 0d | 2020-12-01 | 2020-12-01 |  |
| 326 | 16.7.1 | Write integration documents | manual | 10d |  |  | QA |
| 327 | 16.7.2 | Design automation & manual testing | manual | 0d | 2020-12-01 | 2020-12-01 | QA |
| 328 | 16.7.3 | Develop automation & simulations | manual | 0d | 2020-12-01 | 2020-12-01 | QA |
| 329 | 16.7.4 | Run automation | manual | 0d | 2020-12-01 | 2020-12-01 | QA |
| 330 | 16.7.5 | Perform manual testing | manual | 0d | 2020-12-01 | 2020-12-01 | QA |
| 331 | 16.7.6 | Fixes and improvements | manual | 0d | 2020-12-01 | 2020-12-01 |  |
| 332 | 16.7.7 | Acceptance tests | manual | 0d | 2020-12-01 | 2020-12-01 |  |
| 335 | 16.10 | **SOC External - NASA** |  | 0d | 2020-12-01 | 2020-12-01 |  |
| 336 | 16.10.1 | Write integration documents | manual | 10d |  |  | QA |
| 337 | 16.10.2 | Design automation & manual testing | manual | 0d | 2020-12-01 | 2020-12-01 | QA |
| 338 | 16.10.3 | Develop automation & simulations | manual | 0d | 2020-12-01 | 2020-12-01 | QA |
| 339 | 16.10.4 | Run automation | manual | 0d | 2020-12-01 | 2020-12-01 | QA |
| 340 | 16.10.5 | Perform manual testing | manual | 0d | 2020-12-01 | 2020-12-01 | QA |
| 341 | 16.10.6 | Fixes and improvements | manual | 0d | 2020-12-01 | 2020-12-01 |  |
| 342 | 16.10.7 | Acceptance tests | manual | 0d | 2020-12-01 | 2020-12-01 |  |

| ID | WBS | Task | Type | Duration | Start | Finish | Resources |
| --- | --- | --- | --- | --- | --- | --- | --- |
| 344 | 16.12 | **SOC External - LSST** |  | 0d | 2020-12-01 | 2020-12-01 |  |
| 345 | 16.12.1 | Write integration documents | manual | 10d |  |  | QA |
| 346 | 16.12.2 | Design automation & manual testing | manual | 0d | 2020-12-01 | 2020-12-01 | QA |
| 347 | 16.12.3 | Develop automation & simulations | manual | 0d | 2020-12-01 | 2020-12-01 | QA |
| 348 | 16.12.4 | Run automation | manual | 0d | 2020-12-01 | 2020-12-01 | QA |
| 349 | 16.12.5 | Perform manual testing | manual | 0d | 2020-12-01 | 2020-12-01 | QA |
| 350 | 16.12.6 | Fixes and improvements | manual | 0d | 2020-12-01 | 2020-12-01 |  |
| 351 | 16.12.7 | Acceptance tests | manual | 0d | 2020-12-01 | 2020-12-01 |  |
| 353 | 18 | **Training and Documentation (1.10)** |  | 0d | 2020-12-01 | 2020-12-01 |  |
| 354 | 18.1 | **SOC Operation Simulator Development** |  | 0d | 2020-12-01 | 2020-12-01 |  |
| 355 | 18.1.1 | Requirements and design | manual | 0d | 2020-12-01 | 2020-12-01 |  |
| 356 | 18.1.2 | Write scenarios | manual | 0d | 2020-12-01 | 2020-12-01 |  |
| 357 | 18.1.3 | Software design | manual | 0d | 2020-12-01 | 2020-12-01 |  |
| 358 | 18.1.4 | Software development | manual | 0d | 2020-12-01 | 2020-12-01 |  |
| 359 | 18.1.5 | Evaluation | manual | 0d | 2020-12-01 | 2020-12-01 |  |
| 360 | 18.2 | **QA & Testing** |  | 0d | 2020-12-01 | 2020-12-01 |  |
| 361 | 18.2.1 | Write testing documents and procedures | manual | 5d |  |  | QA |
| 362 | 18.2.2 | Testing | manual | 10d |  |  | QA |
| 363 | 18.2.3 | Fixed & Improvements | manual | 10d |  |  | Chen |
| 365 | 18.4 | **Documentation** |  | 0d | 2020-12-01 | 2020-12-01 |  |
| 366 | 18.4.1 | Write operating procedures | manual | 0d | 2020-12-01 | 2020-12-01 |  |
| 367 | 18.4.2 | Write troubleshooting procedures | manual | 0d | 2020-12-01 | 2020-12-01 |  |
| 368 | 18.4.3 | Write maintenance procedures | manual | 0d | 2020-12-01 | 2020-12-01 |  |
| 370 | 18.6 | **Training Materials** |  | 0d | 2020-12-01 | 2020-12-01 |  |
| 371 | 18.6.1 | Write training docuements | manual | 0d | 2020-12-01 | 2020-12-01 | TechWriter |

| ID | WBS | Task | Type | Duration | Start | Finish | Resources |
| --- | --- | --- | --- | --- | --- | --- | --- |
| 374 | 18.9 | **Help Desk (originally in 1.3.3)** |  | 0d | 2020-12-01 | 2020-12-01 |  |
| 375 | 18.9.1 | Requirements | manual | 0d | 2020-12-01 | 2020-12-01 |  |
| 376 | 18.9.2 | Research available products (Check UVDesk) | manual | 0d | 2020-12-01 | 2020-12-01 | Chen |
| 377 | 18.9.3 | Functional design | manual | 0d | 2020-12-01 | 2020-12-01 |  |
| 378 | 18.9.4 | Write procedures | manual | 0d | 2020-12-01 | 2020-12-01 |  |
| 379 | 18.9.5 | Develop plugins if required (Optional) | manual | 0d | 2020-12-01 | 2020-12-01 | Chen |
| 380 | 18.9.6 | Write training materials | manual | 0d | 2020-12-01 | 2020-12-01 |  |
| 381 | 18.9.7 | Evaluation | manual | 0d | 2020-12-01 | 2020-12-01 |  |
