# ULTRASAT Gantt

Schedule from MS Project XML, 2020-12-01 to 2025-05-01, A marks actual dates.

## Calendars

- Standard: Mon-Thu 08:00-12:00, 13:00-17:00; Fri-Sat off; Sun 08:00-12:00, 13:00-17:00.

## Resources

| Resource |
| --- |
| Eran |
| UAT |
| Sagi |
| Puzzle |
| Lior |
| Yossi |
| QA |
| Team |
| TechWriter |
| Chen |

## Schedule

| ID | WBS | Task | Type | Duration | Start | Finish | Predecessors | Complete | Remaining | Constraint | Resources | Text1 |
| --- | --- | --- | --- | --- | --- | --- | --- | --- | --- | --- | --- | --- |
| 1 | 1 | ULTRASAT PROJECT GANTT | manual | 0d | 2020-12-01 | 2020-12-01 |  |  |  |  |  |  |
| 2 | 2 | Last updated: 06/06/2021 | manual | 0d | 2020-12-01 | 2020-12-01 |  |  |  |  |  |  |
| 5 | 5 | **Project Management (1.1)** |  | 1068d | 2020-12-01 A | 2025-01-02 |  | 3% | 1035.96d | start no earlier than 2020-12-01 |  |  |
| 6 | 5.1 | **System Engineering** |  | 111d | 2020-12-01 A | 2021-05-04 |  | 59% | 45.51d |  |  |  |
| 7 | 5.1.1 | General design (Puzzle documents) |  | 65d | 2020-12-01 A | 2021-03-01 |  | 100% |  |  | Puzzle | Complete |
| 8 | 5.1.2 | Project timeline planning |  | 46d | 2021-03-02 | 2021-05-04 | 7 |  |  |  | Lior |  |
| 10 | 5.3 | **Integrated Logistic Support (ILS) = Project Maintenance Plan** |  | 696d | 2021-04-01 | 2023-11-30 |  |  |  |  |  |  |
| 11 | 5.3.1 | Collect information |  | 261d | 2021-04-01 | 2022-03-31 |  |  |  |  | Lior |  |
| 12 | 5.3.2 | Design |  | 262d | 2021-06-01 | 2022-06-01 |  |  |  |  | Lior |  |
| 13 | 5.3.3 | Write documents and procedures |  | 391d | 2022-06-02 | 2023-11-30 | 12 |  |  |  | Lior |  |
| 14 | 5.3.4 | Write documentation for system parts |  | 391d | 2022-06-02 | 2023-11-30 | 12 |  |  |  | Lior |  |
| 16 | 5.5 | **SOC Standard Operating Procedure (SOP) & Training** |  | 566d | 2021-05-01 | 2023-06-29 |  |  |  |  |  |  |
| 17 | 5.5.1 | Collect information |  | 262d | 2021-05-01 | 2022-05-01 |  |  |  |  | Lior |  |
| 18 | 5.5.2 | Design |  | 44d | 2022-05-01 | 2022-06-29 |  |  |  |  | Lior |  |
| 19 | 5.5.3 | Write SOC operating procedures |  | 261d | 2022-06-30 | 2023-06-29 | 18 |  |  |  | Lior |  |
| 20 | 5.5.4 | Write SOC training materials |  | 261d | 2022-06-30 | 2023-06-29 | 18 |  |  |  | Lior |  |
| 22 | 5.7 | **Architectural Design** |  | 176d | 2021-05-01 | 2021-12-30 |  |  |  |  |  |  |
| 23 | 5.7.1 | **Current Building** |  | 35d | 2021-05-01 | 2021-06-16 |  |  |  |  |  |  |
| 24 | 5.7.1.1 | Comm |  | 35d | 2021-05-01 | 2021-06-16 |  |  |  |  | Lior |  |
| 25 | 5.7.1.2 | SOC |  | 35d | 2021-05-01 | 2021-06-16 |  |  |  |  | Lior |  |
| 26 | 5.7.1.3 | Offices |  | 35d | 2021-05-01 | 2021-06-16 |  |  |  |  | Lior |  |
| 27 | 5.7.2 | **New Building** |  | 176d | 2021-05-01 | 2021-12-30 |  |  |  |  |  |  |
| 28 | 5.7.2.1 | Comm |  | 176d | 2021-05-01 | 2021-12-30 |  |  |  |  | Lior |  |
| 29 | 5.7.2.2 | SOC |  | 176d | 2021-05-01 | 2021-12-30 |  |  |  |  | Lior |  |
| 30 | 5.7.2.3 | Offices |  | 176d | 2021-05-01 | 2021-12-30 |  |  |  |  | Lior |  |

| ID | WBS | Task | Duration | Start | Finish | Predecessors | Constraint | Resources |
| --- | --- | --- | --- | --- | --- | --- | --- | --- |
| 32 | 5.9 | **Hardware Procurement** | 961d | 2021-05-01 | 2025-01-02 |  |  | Lior |
| 33 | 5.9.1 | **Comm (Servers, Storage, Network) Room** | 588d | 2021-05-01 | 2023-07-31 |  |  | Lior |
| 34 | 5.9.1.1 | Specifications | 22d | 2023-01-01 | 2023-01-30 |  |  | Lior |
| 35 | 5.9.1.2 | Servers - Primary & Backup | 93d | 2023-01-31 | 2023-06-08 | 34 |  | Lior |
| 36 | 5.9.1.3 | Storage - Primary & Backup | 130d | 2023-01-31 | 2023-07-31 | 34 |  | Lior |
| 37 | 5.9.1.4 | Racks, Switches, Etc. | 130d | 2023-01-31 | 2023-07-31 | 34 |  | Lior |
| 38 | 5.9.1.5 | Comm, Elect, A/C (Check with Hemda) | 67d | 2021-05-01 | 2021-08-01 |  |  | Lior |
| 39 | 5.9.2 | **SOC** | 154d | 2023-01-01 | 2023-08-02 |  |  | Lior |
| 40 | 5.9.2.1 | Specifications | 22d | 2023-01-01 | 2023-01-30 |  |  | Lior |
| 41 | 5.9.2.2 | Workstations | 132d | 2023-01-31 | 2023-08-02 | 40 |  | Lior |
| 42 | 5.9.2.3 | Monitors (Wall + Desktop) | 132d | 2023-01-31 | 2023-08-02 | 40 |  | Lior |
| 43 | 5.9.3 | **Office** | 134d | 2023-01-01 | 2023-07-05 |  |  |  |
| 44 | 5.9.3.1 | Specifications | 24d | 2023-01-01 | 2023-02-01 |  |  | Lior |
| 45 | 5.9.3.2 | Workstations | 110d | 2023-02-02 | 2023-07-05 | 44 |  | Lior |
| 46 | 5.9.3.3 | Monitors | 110d | 2023-02-02 | 2023-07-05 | 44 |  | Lior |
| 47 | 5.9.4 | **New Building and Auditorium** | 264d | 2024-01-01 | 2025-01-02 |  |  |  |
| 48 | 5.9.4.1 | Specifications | 44d | 2024-01-01 | 2024-02-29 |  |  | Lior |
| 49 | 5.9.4.2 | Procurement - Comm, SOC, Office | 220d | 2024-03-03 | 2025-01-02 | 48 |  | Lior |
| 51 | 7 | **Infrastructure (1.2)** | 1131d | 2021-01-01 | 2025-05-01 |  | start no earlier than 2021-01-01 |  |
| 52 | 7.1 | **Comm (Servers, Storage, Network) Room - Primary & Backup** | 639d | 2021-05-01 | 2023-10-10 |  |  |  |
| 53 | 7.1.1 | Passive (Cables, Connectors) | 67d | 2021-05-01 | 2021-08-01 |  |  | Lior |
| 54 | 7.1.2 | Active (Racks, Network switches, network connection) | 65d | 2023-01-01 | 2023-03-30 |  |  | Lior |
| 55 | 7.1.3 | **Installation and Setup** | 88d | 2023-06-11 | 2023-10-10 | 35 |  |  |
| 56 | 7.1.3.1 | Servers installation & configuration | 88d | 2023-06-11 | 2023-10-10 |  |  | Lior |
| 57 | 7.1.3.2 | Storage installation & configuration | 88d | 2023-06-11 | 2023-10-10 |  |  | Lior |
| 58 | 7.1.3.3 | Network setup | 88d | 2023-06-11 | 2023-10-10 |  |  | Lior |
| 59 | 7.1.3.4 | Server, Storage, Network - Evaluation | 66d | 2023-06-11 | 2023-09-10 |  |  | Lior |

| ID | WBS | Task | Duration | Start | Finish | Predecessors | Constraint | Resources |
| --- | --- | --- | --- | --- | --- | --- | --- | --- |
| 60 | 7.2 | **SOC Room** | 635d | 2021-05-01 | 2023-10-04 |  |  |  |
| 61 | 7.2.1 | Passive (Cables, Connectors) | 67d | 2021-05-01 | 2021-08-01 |  |  | Lior |
| 62 | 7.2.2 | Active (Racks, Network switches, network connection) | 45d | 2023-08-03 | 2023-10-04 | 39 |  | Lior |
| 63 | 7.2.3 | Multimedia - Monitors, Matrix | 45d | 2023-08-03 | 2023-10-04 | 39 |  | Lior |
| 64 | 7.3 | **Visitor Center - New Building - TBD** | 87d | 2025-01-01 | 2025-05-01 |  |  |  |
| 65 | 7.3.1 | Passive (Racks, Cables, Connectors) | 87d | 2025-01-01 | 2025-05-01 |  |  | Lior |
| 66 | 7.3.2 | Active (Network switches, network connection) | 87d | 2025-01-01 | 2025-05-01 |  |  | Lior |
| 67 | 7.3.3 | Multimedia | 87d | 2025-01-01 | 2025-05-01 |  |  | Lior |
| 68 | 7.4 | **WIS Network Requirements** | 590d | 2021-05-01 | 2023-08-02 |  |  |  |
| 69 | 7.4.1 | Write detailed specifications for the hardware and networking components | 90d | 2021-05-01 | 2021-09-01 |  |  | Lior |
| 70 | 7.4.2 | Network installation and setup | 500d | 2021-09-02 | 2023-08-02 | 69 |  | Lior |
| 71 | 7.5 | **Secured Interfaces to IAI (see also Cyber)** | 284d | 2021-01-01 | 2022-02-01 |  |  |  |
| 72 | 7.5.1 | **Communication** | 177d | 2021-04-01 | 2021-12-05 |  |  | Lior |
| 73 | 7.5.1.1 | Specifications | 110d | 2021-04-01 | 2021-09-01 |  |  | Lior |
| 74 | 7.5.1.2 | Fiber / ADSL / Redundancy | 44d | 2021-09-02 | 2021-11-02 | 73 |  | Lior |
| 75 | 7.5.1.3 | IPSec / Cyber / Firewall / VPN | 44d | 2021-09-02 | 2021-11-02 | 73 |  | Lior |
| 76 | 7.5.1.4 | Integration & Testing | 23d | 2021-11-03 | 2021-12-05 | 74, 75 |  | Lior |
| 77 | 7.5.2 | Protocol specifications with IAI - XML etc. | 284d | 2021-01-01 | 2022-02-01 |  |  | Yossi |
| 78 | 7.6 | **Secured WEB Interfaces (DESY, NASA, LSST, Public) - see also Cyber** | 154d | 2023-01-01 | 2023-08-02 |  |  |  |
| 79 | 7.6.1 | Specifications | 110d | 2023-01-01 | 2023-06-01 |  |  | Lior |
| 80 | 7.6.2 | Check Cyber aspects | 110d | 2023-01-01 | 2023-06-01 |  |  | Lior |
| 81 | 7.6.3 | Installation & Configuration | 44d | 2023-06-04 | 2023-08-02 | 79 |  | Lior |
| 83 | 9 | **Observation, Operation, Management, Control (1.3) [Software]** | 527d | 2021-04-01 | 2023-04-09 |  | start no earlier than 2021-04-01 |  |
| 84 | 9.1 | **Operations - SOC Command & Control of ULTRASAT** | 527d | 2021-04-01 | 2023-04-09 |  |  |  |
| 85 | 9.1.1 | Functional design (Including incoming alerts, LSST, etc.) | 305d | 2021-04-01 | 2022-06-01 |  |  | Chen |
| 86 | 9.1.2 | Software design | 305d | 2021-04-01 | 2022-06-01 |  |  | Chen |
| 87 | 9.1.3 | GUI design | 285d | 2021-05-01 | 2022-06-01 |  |  | Chen |
| 88 | 9.1.4 | Design Review | 6d | 2022-06-02 | 2022-06-09 | 87 |  | Chen |
| 89 | 9.1.5 | Software development | 80d | 2022-06-12 | 2022-09-29 | 88 |  | Chen |

| ID | WBS | Task | Duration | Start | Finish | Predecessors | Constraint | Resources |
| --- | --- | --- | --- | --- | --- | --- | --- | --- |
| 90 | 9.1.6 | **QA & Testing** | 147d | 2022-07-15 | 2023-02-05 |  |  |  |
| 91 | 9.1.6.1 | Write testing documents | 13d | 2022-07-15 | 2022-08-01 |  |  | QA |
| 92 | 9.1.6.2 | Testing | 133d | 2022-08-02 | 2023-02-02 | 91 |  | QA |
| 93 | 9.1.6.3 | Fixes & Improvements | 134d | 2022-08-02 | 2023-02-05 | 91 |  | Chen |
| 94 | 9.1.7 | Delivery Review | 45d | 2023-02-06 | 2023-04-09 | 93 |  | Chen |
| 96 | 9.3 | **Observation Planning** | 506d | 2021-05-01 | 2023-04-06 |  |  |  |
| 97 | 9.3.1 | Functional design | 285d | 2021-05-01 | 2022-06-01 |  |  | Eran |
| 98 | 9.3.2 | Software design | 196d | 2021-09-01 | 2022-06-01 |  |  | Chen |
| 99 | 9.3.3 | GUI design | 196d | 2021-09-01 | 2022-06-01 |  |  | Chen |
| 100 | 9.3.4 | Design Review | 6d | 2022-06-02 | 2022-06-09 | 99 |  | Chen |
| 101 | 9.3.5 | Algorithms development | 125d | 2022-06-12 | 2022-12-01 |  |  | Eran |
| 102 | 9.3.6 | Software development | 125d | 2022-06-12 | 2022-12-01 |  |  | Chen |
| 103 | 9.3.7 | GUI development - Desktop / Web | 59d | 2022-09-12 | 2022-12-01 |  |  | Chen |
| 104 | 9.3.8 | **QA & Testing** | 132d | 2022-09-14 | 2023-03-16 |  |  |  |
| 105 | 9.3.8.1 | Write testing documents | 12d | 2022-09-14 | 2022-09-29 |  |  | QA |
| 106 | 9.3.8.2 | Testing | 120d | 2022-10-02 | 2023-03-16 | 105 |  | QA |
| 107 | 9.3.8.3 | Fixes & Improvements | 120d | 2022-10-01 | 2023-03-15 |  |  | Chen |
| 108 | 9.3.9 | Delivery Review | 16d | 2023-03-16 | 2023-04-06 | 107 |  | Chen |
| 111 | 11 | **External Interfaces (1.4) - [Software]** | 504d | 2022-02-01 | 2024-01-07 |  | start no earlier than 2022-02-01 |  |
| 112 | 11.1 | **IAI Interface** | 289d | 2022-02-01 | 2023-03-12 |  |  |  |
| 113 | 11.1.1 | Complete protocol specifications with IAI-GCS | 22d | 2022-02-01 | 2022-03-02 |  |  | Yossi |
| 114 | 11.1.2 | Design Review | 6d | 2022-03-03 | 2022-03-10 | 113 |  |  |
| 115 | 11.1.3 | Develop Incoming images handling - from IAI to Pipeline | 261d | 2022-03-13 | 2023-03-12 | 114 |  | Chen |
| 116 | 11.1.4 | Develop Metadata handling - from IAI to Pipeline and Managers | 261d | 2022-03-13 | 2023-03-12 | 114 |  | Chen |
| 117 | 11.1.5 | Develop Command & Control aspects | 261d | 2022-03-13 | 2023-03-12 | 114 |  | Chen |
| 118 | 11.1.6 | Develop Simulators and testing tools | 261d | 2022-03-13 | 2023-03-12 | 114 |  | Chen |

| ID | WBS | Task | Duration | Start | Finish | Predecessors | Resources |
| --- | --- | --- | --- | --- | --- | --- | --- |
| 119 | 11.1.7 | **QA & Testing** | 54d | 2022-03-01 | 2022-05-15 |  |  |
| 120 | 11.1.7.1 | Write testing documents | 9d | 2022-03-01 | 2022-03-13 |  | QA |
| 121 | 11.1.7.2 | Testing | 45d | 2022-03-14 | 2022-05-15 | 120 | QA |
| 122 | 11.1.7.3 | Fixes & Improvements | 45d | 2022-03-14 | 2022-05-15 | 120 | Chen |
| 123 | 11.2 | Delivery Review | 1d | 2022-06-01 | 2022-06-01 |  |  |
| 125 | 11.4 | **NASA Interface** | 267d | 2022-06-01 | 2023-06-08 |  |  |
| 126 | 11.4.1 | **Communication - Infrastructure** | 111d | 2022-08-01 | 2023-01-02 |  | Lior |
| 127 | 11.4.1.1 | Fiber / ADSL / Redundancy | 89d | 2022-08-01 | 2022-12-01 |  | Lior |
| 128 | 11.4.1.2 | IPSec / Cyber / Firewall | 89d | 2022-08-01 | 2022-12-01 |  | Lior |
| 129 | 11.4.1.3 | Integration & Testing | 22d | 2022-12-04 | 2023-01-02 | 127, 128 | QA |
| 130 | 11.4.2 | Design - requirements, protocols, access | 153d | 2022-06-01 | 2023-01-01 |  | Yossi |
| 131 | 11.4.3 | Design Review | 5d | 2023-01-01 | 2023-01-05 |  |  |
| 132 | 11.4.4 | Development | 110d | 2023-01-08 | 2023-06-08 | 131 | Chen |
| 133 | 11.4.5 | **QA & Testing** | 87d | 2023-02-01 | 2023-06-01 |  |  |
| 134 | 11.4.5.1 | Write testing documents | 21d | 2023-02-01 | 2023-03-01 |  | QA |
| 135 | 11.4.5.2 | Testing | 67d | 2023-03-01 | 2023-06-01 |  | QA |
| 136 | 11.4.5.3 | Fixes & Improvements | 67d | 2023-03-01 | 2023-06-01 |  | Chen |
| 137 | 11.5 | Delivery Review | 1d | 2024-01-01 | 2024-01-01 |  |  |
| 139 | 11.7 | **DESY Interface** | 217d | 2022-06-01 | 2023-03-30 |  |  |
| 140 | 11.7.1 | **Communication - Infrastructure** | 109d | 2022-08-01 | 2022-12-29 |  | Lior |
| 141 | 11.7.1.1 | Fiber / ADSL / Redundancy | 89d | 2022-08-01 | 2022-12-01 |  | Lior |
| 142 | 11.7.1.2 | IPSec / Cyber / Firewall | 89d | 2022-08-01 | 2022-12-01 |  | Lior |
| 143 | 11.7.1.3 | Integration & Testing | 21d | 2022-12-01 | 2022-12-29 |  | QA |
| 144 | 11.7.2 | Design - requirements, protocols, access | 153d | 2022-06-01 | 2023-01-01 |  | Yossi |
| 145 | 11.7.3 | Design Review | 1d | 2022-12-30 | 2022-12-30 |  |  |
| 146 | 11.7.4 | Development | 65d | 2023-01-01 | 2023-03-30 |  | Chen |

| ID | WBS | Task | Type | Duration | Start | Finish | Constraint | Resources | Text1 |
| --- | --- | --- | --- | --- | --- | --- | --- | --- | --- |
| 147 | 11.7.5 | **QA & Testing** |  | 44d | 2023-01-01 | 2023-03-01 |  | QA |  |
| 148 | 11.7.5.1 | Write testing documents |  | 24d | 2023-01-01 | 2023-02-01 |  | QA |  |
| 149 | 11.7.5.2 | Testing |  | 21d | 2023-02-01 | 2023-03-01 |  | QA |  |
| 150 | 11.7.5.3 | Fixes & Improvements |  | 21d | 2023-02-01 | 2023-03-01 |  | Chen |  |
| 151 | 11.8 | Delivery Review |  | 1d | 2024-01-01 | 2024-01-01 |  |  |  |
| 153 | 11.10 | **LSST Interface** |  | 183d | 2022-08-01 | 2023-04-12 |  |  |  |
| 154 | 11.10.1 | **Communication - Infrastructure** |  | 109d | 2022-08-01 | 2022-12-29 |  | Lior |  |
| 155 | 11.10.1.1 | Fiber / ADSL / Redundancy |  | 89d | 2022-08-01 | 2022-12-01 |  | Lior |  |
| 156 | 11.10.1.2 | IPSec / Cyber / Firewall |  | 89d | 2022-08-01 | 2022-12-01 |  | Lior |  |
| 157 | 11.10.1.3 | Integration & Testing |  | 21d | 2022-12-01 | 2022-12-29 |  | QA |  |
| 158 | 11.10.2 | Design - requirements, protocols, access | manual | 10d |  |  |  | Yossi |  |
| 159 | 11.10.3 | Design Review |  | 1d | 2022-12-30 | 2022-12-30 |  |  |  |
| 160 | 11.10.4 | Development |  | 20d | 2023-01-01 | 2023-01-26 |  | Chen |  |
| 161 | 11.10.5 | **QA & Testing** |  | 31d | 2023-03-01 | 2023-04-12 |  | QA |  |
| 162 | 11.10.5.1 | Write testing documents |  | 5d | 2023-03-01 | 2023-03-07 |  | Lior |  |
| 163 | 11.10.5.2 | Testing |  | 10d | 2023-04-01 | 2023-04-12 |  | QA |  |
| 164 | 11.10.5.3 | Fixes & Improvements |  | 10d | 2023-04-01 | 2023-04-12 |  | Chen |  |
| 165 | 11.11 | Delivery Review |  | 5d | 2024-01-01 | 2024-01-07 |  |  |  |
| 168 | 14 | **Image & Data Processing (1.5) [Software]** |  | 526d | 2021-01-01 | 2023-01-05 | start no earlier than 2021-01-01 |  |  |
| 169 | 14.1 | **Pipeline (MATLAB)** |  | 526d | 2021-01-01 | 2023-01-05 |  |  |  |
| 170 | 14.1.1 | Functional design |  | 240d | 2021-01-01 | 2021-12-01 |  | Eran | In Progress |
| 171 | 14.1.2 | Databases design |  | 240d | 2021-01-01 | 2021-12-01 |  | Eran | In Progress |
| 172 | 14.1.3 | AstroPack Packages/Class design |  | 198d | 2021-03-01 | 2021-12-01 |  | Eran | In Progress |
| 173 | 14.1.4 | **Software Development - Core** |  | 198d | 2021-03-01 | 2021-12-01 |  |  |  |
| 174 | 14.1.4.1 | Base classes (Header, Containers, etc) |  | 188d | 2021-03-15 | 2021-12-01 |  | Eran | In Progress |
| 175 | 14.1.4.2 | Base classes - Log, Database |  | 67d | 2021-03-01 | 2021-06-01 |  | Chen |  |
| 176 | 14.1.4.3 | Pipeline Manager |  | 67d | 2021-05-01 | 2021-08-01 |  | Chen |  |
| 177 | 14.1.4.4 | Single step process - From RawImage to Products | manual | 0d | 2020-12-01 | 2020-12-01 |  | Eran |  |
| 178 | 14.1.4.5 | GUI |  | 23d | 2021-06-01 | 2021-07-01 |  |  |  |
| 179 | 14.1.5 | Design & Status Review - Phase 1 |  | 6d | 2021-08-30 | 2021-09-06 |  |  |  |

| ID | WBS | Task | Type | Duration | Start | Finish | Resources |
| --- | --- | --- | --- | --- | --- | --- | --- |
| 180 | 14.1.6 | **LAST Usecase** |  | 0d | 2020-12-01 | 2020-12-01 |  |
| 181 | 14.1.6.1 | Specifications | manual | 0d | 2020-12-01 | 2020-12-01 | Eran |
| 182 | 14.1.6.2 | Additional development | manual | 0d | 2020-12-01 | 2020-12-01 | Eran |
| 183 | 14.1.6.3 | Additional development | manual | 0d | 2020-12-01 | 2020-12-01 | Chen |
| 184 | 14.1.6.4 | QA & Testing | manual | 0d | 2020-12-01 | 2020-12-01 | Sagi |
| 185 | 14.1.6.5 | Fixes & Improvements | manual | 0d | 2020-12-01 | 2020-12-01 | Chen |
| 186 | 14.1.7 | LAST Delivery Review |  | 5d | 2023-01-01 | 2023-01-05 |  |
| 187 | 14.1.8 | **Pipeline Development** |  | 0d | 2020-12-01 | 2020-12-01 |  |
| 188 | 14.1.8.1 | TODO HERE - DETAILS........... | manual | 0d | 2020-12-01 | 2020-12-01 |  |
| 191 | 14.1.11 | **QA & Testing** |  | 89d | 2021-10-01 | 2022-02-01 | QA |
| 192 | 14.1.11.1 | Write testing documents |  | 11d | 2021-10-01 | 2021-10-14 | QA |
| 193 | 14.1.11.2 | Testing |  | 89d | 2021-10-01 | 2022-02-01 | QA |
| 194 | 14.1.11.3 | Fixes |  | 89d | 2021-10-01 | 2022-02-01 | Eran |
| 195 | 14.1.12 | Source code documentation & help |  | 89d | 2021-10-01 | 2022-02-01 | Eran |
| 196 | 14.2 | Pipeline Delivery Review - Phase 1 |  | 5d | 2022-02-01 | 2022-02-07 |  |
| 198 | 14.4 | **Pipeline - Phase 2 - TBD** |  | 0d | 2020-12-01 | 2020-12-01 |  |
| 199 | 14.4.1 | Specifications | manual | 0d | 2020-12-01 | 2020-12-01 |  |
| 200 | 14.4.2 | Development | manual | 0d | 2020-12-01 | 2020-12-01 |  |
| 206 | 14.10 | **WIS Databases & Archives** |  | 288d | 2021-01-01 | 2022-02-07 |  |
| 207 | 14.10.1 | Specifications and design |  | 240d | 2021-01-01 | 2021-12-01 | Yossi |
| 208 | 14.10.2 | Design Review |  | 6d | 2021-08-30 | 2021-09-06 |  |
| 209 | 14.10.3 | Development |  | 111d | 2021-05-01 | 2021-09-30 | Chen |
| 210 | 14.10.4 | **QA & Testing** |  | 24d | 2021-09-01 | 2021-10-04 | QA |
| 211 | 14.10.4.1 | Write testing documents |  | 5d | 2021-09-01 | 2021-09-07 | QA |
| 212 | 14.10.4.2 | Testing |  | 20d | 2021-09-07 | 2021-10-04 | QA |
| 213 | 14.10.4.3 | Fixes & Improvements |  | 20d | 2021-09-07 | 2021-10-04 | Chen |
| 214 | 14.10.5 | Delivery Review |  | 5d | 2022-02-01 | 2022-02-07 |  |

| ID | WBS | Task | Duration | Start | Finish | Constraint | Resources |
| --- | --- | --- | --- | --- | --- | --- | --- |
| 217 | 17 | **Data Archiving and Accessibility (1.6) [Software]** | 702d | 2021-06-01 | 2024-02-07 | start no earlier than 2021-06-01 |  |
| 218 | 17.1 | **Databases & Archives** | 285d | 2023-01-01 | 2024-02-01 |  |  |
| 219 | 17.1.1 | Requirements and design | 44d | 2023-01-01 | 2023-03-01 |  | Yossi |
| 220 | 17.1.2 | Design Review | 5d | 2023-03-01 | 2023-03-07 |  |  |
| 221 | 17.1.3 | Development | 66d | 2023-04-01 | 2023-06-29 |  | Chen |
| 222 | 17.1.4 | **QA & Testing** | 176d | 2023-06-01 | 2024-02-01 |  |  |
| 223 | 17.1.4.1 | Write testing documents | 10d | 2023-06-01 | 2023-06-14 |  | QA |
| 224 | 17.1.4.2 | Testing | 176d | 2023-06-01 | 2024-02-01 |  | QA |
| 225 | 17.1.4.3 | Fixes & Improvements | 176d | 2023-06-01 | 2024-02-01 |  | Chen |
| 226 | 17.2 | Delivery Review | 5d | 2024-02-01 | 2024-02-07 |  |  |
| 228 | 17.4 | **Products Access (WebApps, GUI, SQL, Python API)** | 698d | 2021-06-01 | 2024-02-01 |  |  |
| 229 | 17.4.1 | Requirements and design | 44d | 2023-01-01 | 2023-03-01 |  | Yossi |
| 230 | 17.4.2 | Design Review | 5d | 2023-03-01 | 2023-03-07 |  |  |
| 231 | 17.4.3 | Development (WebApp & MobileApp) | 90d | 2023-07-01 | 2023-11-01 |  | Chen |
| 232 | 17.4.4 | Additional tools design and development (Signal-to-Noise, etc.) | 44d | 2021-06-01 | 2021-08-01 |  | Chen |
| 233 | 17.4.5 | **QA & Testing** | 176d | 2023-06-01 | 2024-02-01 |  |  |
| 234 | 17.4.5.1 | Write testing documents and procedures | 10d | 2023-06-01 | 2023-06-14 |  | QA |
| 235 | 17.4.5.2 | Testing | 176d | 2023-06-01 | 2024-02-01 |  | QA |
| 236 | 17.4.5.3 | Fixed & Improvements | 176d | 2023-06-01 | 2024-02-01 |  | Chen |
| 237 | 17.5 | Delivery Review | 5d | 2024-02-01 | 2024-02-07 |  |  |
| 239 | 17.7 | **Alerts Access** | 285d | 2023-01-01 | 2024-02-01 |  |  |
| 240 | 17.7.1 | Requirements and design | 44d | 2023-01-01 | 2023-03-01 |  | Yossi |
| 241 | 17.7.2 | Design Review | 5d | 2023-03-01 | 2023-03-07 |  |  |
| 242 | 17.7.3 | Development - Outgoing alerts | 111d | 2023-07-01 | 2023-11-30 |  | Chen |
| 243 | 17.7.4 | Development (WebApp & MobileApp) | 111d | 2023-07-01 | 2023-11-30 |  | Chen |

| ID | WBS | Task | Type | Duration | Start | Finish | Constraint | Resources |
| --- | --- | --- | --- | --- | --- | --- | --- | --- |
| 244 | 17.7.5 | **QA & Testing** |  | 111d | 2023-09-01 | 2024-02-01 |  |  |
| 245 | 17.7.5.1 | Write testing documents and procedures |  | 111d | 2023-09-01 | 2024-02-01 |  | QA |
| 246 | 17.7.5.2 | Testing |  | 111d | 2023-09-01 | 2024-02-01 |  | QA |
| 247 | 17.7.5.3 | Fixed & Improvements |  | 111d | 2023-09-01 | 2024-02-01 |  | Chen |
| 248 | 17.8 | Delivery Review |  | 5d | 2024-02-01 | 2024-02-07 |  |  |
| 250 | 17.10 | **Partial Pipeline** |  | 240d | 2023-01-01 | 2023-11-30 |  |  |
| 251 | 17.10.1 | Requirements and design |  | 44d | 2023-01-01 | 2023-03-01 |  | Eran |
| 252 | 17.10.2 | Design Review |  | 5d | 2023-03-01 | 2023-03-07 |  |  |
| 253 | 17.10.3 | Algorithms Development |  | 111d | 2023-07-01 | 2023-11-30 |  | Eran |
| 254 | 17.10.4 | Development |  | 111d | 2023-07-01 | 2023-11-30 |  | Chen |
| 255 | 17.10.5 | **QA & Testing** |  | 1d | 2023-09-01 | 2023-09-01 |  |  |
| 256 | 17.10.5.1 | Write testing documents and procedures |  | 1d | 2023-09-01 | 2023-09-01 |  | QA |
| 257 | 17.10.5.2 | Testing |  | 1d | 2023-09-01 | 2023-09-01 |  | Eran |
| 258 | 17.10.5.3 | Fixed & Improvements |  | 1d | 2023-09-01 | 2023-09-01 |  | Chen |
| 259 | 18 | Delivery Review |  | 5d | 2024-02-01 | 2024-02-07 | start no earlier than 2024-02-01 |  |
| 262 | 21 | **SOC System Management (1.7) [Software]** |  | 5d | 2022-12-30 | 2023-01-04 | start no earlier than 2022-12-30 |  |
| 264 | 21.2 | **SW & HW Infrastructure Architecture** |  | 0d | 2020-12-01 | 2020-12-01 |  |  |
| 265 | 21.2.1 | Requirements and design | manual | 0d | 2020-12-01 | 2020-12-01 |  | Team |
| 267 | 21.4 | **SOC HMI Concept (GUI)** |  | 1d | 2022-12-30 | 2022-12-30 |  |  |
| 268 | 21.4.1 | Design - Functional requirements | manual | 5d |  |  |  | Chen |
| 269 | 21.4.2 | Design - UX | manual | 10d |  |  |  | Chen |
| 270 | 21.4.3 | Design Review |  | 1d | 2022-12-30 | 2022-12-30 |  |  |
| 271 | 21.4.4 | Evaluation and improvements | manual | 5d |  |  |  | Team |
| 273 | 21.6 | **Cyber - Requirements and Implementation (VPN in most cases)** |  | 0d | 2020-12-01 | 2020-12-01 |  |  |
| 274 | 21.6.1 | IAI | manual | 5d |  |  |  | Lior |
| 275 | 21.6.2 | DESY | manual | 5d |  |  |  | Lior |
| 276 | 21.6.3 | NASA | manual | 5d |  |  |  | Lior |
| 277 | 21.6.4 | LSST | manual | 5d |  |  |  | Lior |
| 278 | 21.6.5 | Public | manual | 5d |  |  |  | Lior |

| ID | WBS | Task | Type | Duration | Start | Finish | Predecessors | Constraint | Resources |
| --- | --- | --- | --- | --- | --- | --- | --- | --- | --- |
| 280 | 21.8 | **Procedures and Rule Engine [Development]** |  | 1d | 2022-12-30 | 2022-12-30 |  |  |  |
| 282 | 21.8.2 | Design Review |  | 1d | 2022-12-30 | 2022-12-30 |  |  |  |
| 283 | 21.8.3 | Alerts | manual | 5d |  |  |  |  | Chen |
| 284 | 21.8.4 | Target of Opportunity | manual | 5d |  |  |  |  | Chen |
| 285 | 21.8.5 | Transients | manual | 5d |  |  |  |  | Chen |
| 286 | 21.8.6 | Task Scheduler | manual | 5d |  |  |  |  | Chen |
| 287 | 21.8.7 | Pending tasks | manual | 5d |  |  |  |  | Chen |
| 288 | 21.8.8 | **QA & Testing** |  | 0d | 2020-12-01 | 2020-12-01 |  |  |  |
| 289 | 21.8.8.1 | Write testing documents and procedures | manual | 5d |  |  |  |  | QA |
| 290 | 21.8.8.2 | Testing | manual | 10d |  |  |  |  | QA |
| 291 | 21.8.8.3 | Fixed & Improvements | manual | 10d |  |  |  |  | Chen |
| 293 | 21.10 | System Monitoring | manual | 0d | 2020-12-01 | 2020-12-01 |  |  |  |
| 295 | 21.12 | Design Review |  | 5d | 2022-12-30 | 2023-01-04 |  |  |  |
| 298 | 21.15 | **QA & Testing** |  | 0d | 2020-12-01 | 2020-12-01 |  |  |  |
| 299 | 21.15.1 | Write testing documents and procedures | manual | 5d |  |  |  |  | QA |
| 300 | 21.15.2 | Testing | manual | 10d |  |  |  |  | QA |
| 301 | 21.15.3 | Fixed & Improvements | manual | 10d |  |  |  |  | Chen |
| 303 | 21.17 | **Component Testing** |  | 0d | 2020-12-01 | 2020-12-01 |  |  |  |
| 304 | 21.17.1 | **QA & Testing** |  | 0d | 2020-12-01 | 2020-12-01 |  |  |  |
| 305 | 21.17.1.1 | Write testing documents and procedures | manual | 5d |  |  |  |  | QA |
| 306 | 21.17.1.2 | Testing | manual | 10d |  |  |  |  | QA |
| 307 | 21.17.1.3 | Fixed & Improvements | manual | 10d |  |  |  |  | Chen |
| 310 | 24 | **QA & Integration + Acceptance Tests (1.9)** |  | 85d | 2024-04-01 | 2024-07-28 |  | start no earlier than 2024-04-01 |  |
| 311 | 24.1 | Integration Readiness |  | 5d | 2024-04-01 | 2024-04-07 |  |  | Lior |
| 312 | 24.2 | Integration Review |  | 5d | 2024-04-08 | 2024-04-14 | 311 |  | Lior |

| ID | WBS | Task | Type | Duration | Start | Finish | Predecessors | Resources |
| --- | --- | --- | --- | --- | --- | --- | --- | --- |
| 315 | 24.5 | **SOC Internal - Software Component** |  | 85d | 2024-04-01 | 2024-07-28 |  |  |
| 316 | 24.5.1 | Integration Readiness |  | 5d | 2024-04-01 | 2024-04-07 |  | Lior |
| 318 | 24.5.3 | **QA & Testing** |  | 43d | 2024-04-15 | 2024-06-12 |  |  |
| 319 | 24.5.3.1 | Write testing documents and procedures |  | 10d | 2024-04-15 | 2024-04-28 |  | QA |
| 320 | 24.5.3.2 | Integration Review | manual | 0d | 2020-12-01 | 2020-12-01 |  |  |
| 321 | 24.5.3.3 | Testing |  | 23d | 2024-04-29 | 2024-05-29 | 319 | QA |
| 322 | 24.5.3.4 | Fixed & Improvements |  | 10d | 2024-05-30 | 2024-06-12 | 321 | Chen |
| 323 | 24.5.4 | **Acceptance tests** |  | 32d | 2024-06-13 | 2024-07-28 |  |  |
| 324 | 24.5.4.1 | Tests |  | 5d | 2024-06-13 | 2024-06-19 | 322 |  |
| 325 | 24.5.4.2 | Fixes |  | 22d | 2024-06-20 | 2024-07-21 | 324 |  |
| 326 | 24.5.4.3 | Final tests |  | 5d | 2024-07-22 | 2024-07-28 | 325 |  |
| 328 | 24.7 | **SOC Internal - SOC Components Integration (HW+SW)** |  | 85d | 2024-04-01 | 2024-07-28 |  |  |
| 329 | 24.7.1 | Integration Readiness |  | 5d | 2024-04-01 | 2024-04-07 |  | Lior |
| 331 | 24.7.3 | **QA & Testing** |  | 43d | 2024-04-15 | 2024-06-12 |  |  |
| 332 | 24.7.3.1 | Write testing documents and procedures |  | 10d | 2024-04-15 | 2024-04-28 |  | QA |
| 333 | 24.7.3.2 | Integration Review | manual | 0d | 2020-12-01 | 2020-12-01 |  |  |
| 334 | 24.7.3.3 | Testing |  | 23d | 2024-04-29 | 2024-05-29 | 332 | QA |
| 335 | 24.7.3.4 | Fixed & Improvements |  | 10d | 2024-05-30 | 2024-06-12 | 334 | Chen |
| 336 | 24.7.4 | **Acceptance tests** |  | 33d | 2024-06-12 | 2024-07-28 |  |  |
| 337 | 24.7.4.1 | Tests |  | 5d | 2024-06-12 | 2024-06-18 |  | UAT |
| 338 | 24.7.4.2 | Fixes |  | 23d | 2024-06-19 | 2024-07-21 | 337 | Chen |
| 339 | 24.7.4.3 | Final tests |  | 5d | 2024-07-22 | 2024-07-28 | 338 | UAT |
| 341 | 24.9 | **SOC External - IAI** |  | 37d | 2024-04-01 | 2024-05-21 |  |  |
| 342 | 24.9.1 | Integration Readiness |  | 5d | 2024-04-01 | 2024-04-07 |  |  |

| ID | WBS | Task | Type | Duration | Start | Finish | Predecessors | Resources |
| --- | --- | --- | --- | --- | --- | --- | --- | --- |
| 344 | 24.9.3 | **QA & Testing** |  | 10d | 2024-04-07 | 2024-04-18 |  |  |
| 345 | 24.9.3.1 | Write integration documents |  | 10d | 2024-04-07 | 2024-04-18 |  | QA |
| 346 | 24.9.3.2 | Integration Review | manual | 0d | 2020-12-01 | 2020-12-01 |  |  |
| 347 | 24.9.3.3 | Design automation & manual testing |  | 1d | 2024-04-07 | 2024-04-07 |  | QA |
| 348 | 24.9.3.4 | Develop automation & simulations |  | 1d | 2024-04-07 | 2024-04-07 |  | QA |
| 349 | 24.9.3.5 | Run automation | manual | 0d | 2020-12-01 | 2020-12-01 |  | QA |
| 350 | 24.9.3.6 | Perform manual testing | manual | 0d | 2020-12-01 | 2020-12-01 |  | QA |
| 351 | 24.9.3.7 | Fixes and improvements | manual | 0d | 2020-12-01 | 2020-12-01 |  | Chen |
| 352 | 24.9.4 | **Acceptance tests** |  | 33d | 2024-04-07 | 2024-05-21 |  |  |
| 353 | 24.9.4.1 | Tests |  | 5d | 2024-04-07 | 2024-04-11 |  | UAT |
| 354 | 24.9.4.2 | Fixes |  | 23d | 2024-04-14 | 2024-05-14 | 353 | Chen |
| 355 | 24.9.4.3 | Final tests |  | 5d | 2024-05-15 | 2024-05-21 | 354 | UAT |
| 357 | 24.11 | **SOC External - DESY** |  | 5d | 2024-04-01 | 2024-04-07 |  |  |
| 358 | 24.11.1 | Integration Readiness |  | 5d | 2024-04-01 | 2024-04-07 |  |  |
| 360 | 24.11.3 | **QA & Testing** |  | 0d | 2020-12-01 | 2020-12-01 |  |  |
| 361 | 24.11.3.1 | Write integration documents | manual | 10d |  |  |  | QA |
| 362 | 24.11.3.2 | Integration Review | manual | 0d | 2020-12-01 | 2020-12-01 |  |  |
| 363 | 24.11.3.3 | Design automation & manual testing | manual | 0d | 2020-12-01 | 2020-12-01 |  | QA |
| 364 | 24.11.3.4 | Develop automation & simulations | manual | 0d | 2020-12-01 | 2020-12-01 |  | QA |
| 365 | 24.11.3.5 | Run automation | manual | 0d | 2020-12-01 | 2020-12-01 |  | QA |
| 366 | 24.11.3.6 | Perform manual testing | manual | 0d | 2020-12-01 | 2020-12-01 |  | QA |
| 367 | 24.11.3.7 | Fixes and improvements | manual | 0d | 2020-12-01 | 2020-12-01 |  | Chen |
| 368 | 24.11.4 | **Acceptance tests** |  | 0d | 2020-12-01 | 2020-12-01 |  |  |
| 369 | 24.11.4.1 | Tests | manual | 5d |  |  |  | UAT |
| 370 | 24.11.4.2 | Fixes | manual | 0d |  |  |  | Chen |
| 371 | 24.11.4.3 | Final tests | manual | 5d |  |  |  | UAT |

| ID | WBS | Task | Type | Duration | Start | Finish | Resources |
| --- | --- | --- | --- | --- | --- | --- | --- |
| 374 | 24.14 | **SOC External - NASA** |  | 10d | 2024-04-01 | 2024-04-14 |  |
| 375 | 24.14.1 | Integration Readiness |  | 5d | 2024-04-01 | 2024-04-07 | Lior |
| 377 | 24.14.3 | **QA & Testing** |  | 0d | 2020-12-01 | 2020-12-01 |  |
| 378 | 24.14.3.1 | Write integration documents | manual | 10d |  |  | QA |
| 379 | 24.14.3.2 | Integration Review | manual | 0d | 2020-12-01 | 2020-12-01 |  |
| 380 | 24.14.3.3 | Design automation & manual testing | manual | 0d | 2020-12-01 | 2020-12-01 | QA |
| 381 | 24.14.3.4 | Develop automation & simulations | manual | 0d | 2020-12-01 | 2020-12-01 | QA |
| 382 | 24.14.3.5 | Run automation | manual | 0d | 2020-12-01 | 2020-12-01 | QA |
| 383 | 24.14.3.6 | Perform manual testing | manual | 0d | 2020-12-01 | 2020-12-01 | QA |
| 384 | 24.14.3.7 | Fixes and improvements | manual | 0d | 2020-12-01 | 2020-12-01 | Chen |
| 385 | 24.14.4 | **Acceptance tests** |  | 0d | 2020-12-01 | 2020-12-01 | UAT |
| 386 | 24.14.4.1 | Tests | manual | 5d |  |  | QA |
| 387 | 24.14.4.2 | Fixes | manual | 0d |  |  | Chen |
| 388 | 24.14.4.3 | Final tests | manual | 5d |  |  | UAT |
| 390 | 24.16 | **SOC External - LSST** |  | 41d | 2024-04-01 | 2024-05-27 |  |
| 391 | 24.16.1 | Integration Readiness |  | 5d | 2024-04-01 | 2024-04-07 | Lior |
| 393 | 24.16.3 | **QA & Testing** |  | 0d | 2020-12-01 | 2020-12-01 |  |
| 394 | 24.16.3.1 | Write integration documents | manual | 10d |  |  | QA |
| 395 | 24.16.3.2 | Integration Review | manual | 0d | 2020-12-01 | 2020-12-01 |  |
| 396 | 24.16.3.3 | Design automation & manual testing | manual | 0d | 2020-12-01 | 2020-12-01 | QA |
| 397 | 24.16.3.4 | Develop automation & simulations | manual | 0d | 2020-12-01 | 2020-12-01 | QA |
| 398 | 24.16.3.5 | Run automation | manual | 0d | 2020-12-01 | 2020-12-01 | QA |
| 399 | 24.16.3.6 | Perform manual testing | manual | 0d | 2020-12-01 | 2020-12-01 | QA |
| 400 | 24.16.3.7 | Fixes and improvements | manual | 0d | 2020-12-01 | 2020-12-01 | Chen |

| ID | WBS | Task | Type | Duration | Start | Finish | Predecessors | Constraint | Resources |
| --- | --- | --- | --- | --- | --- | --- | --- | --- | --- |
| 401 | 24.16.4 | **Acceptance tests** |  | 33d | 2024-04-12 | 2024-05-27 |  |  | UAT |
| 402 | 24.16.4.1 | Tests |  | 5d | 2024-04-12 | 2024-04-17 |  |  | QA |
| 403 | 24.16.4.2 | Fixes |  | 23d | 2024-04-18 | 2024-05-20 | 402 |  | Chen |
| 404 | 24.16.4.3 | Final tests |  | 5d | 2024-05-21 | 2024-05-27 | 403 |  | UAT |
| 406 | 26 | Delivery Review |  | 14d | 2024-08-01 | 2024-08-20 |  | start no earlier than 2024-08-01 | Lior |
| 410 | 30 | **Training and Documentation (1.10)** |  | 0d | 2020-12-01 | 2020-12-01 |  |  |  |
| 411 | 30.1 | **SOC Operation Simulator Development** |  | 0d | 2020-12-01 | 2020-12-01 |  |  |  |
| 412 | 30.1.1 | Requirements and design | manual | 0d | 2020-12-01 | 2020-12-01 |  |  |  |
| 413 | 30.1.2 | Write scenarios | manual | 0d | 2020-12-01 | 2020-12-01 |  |  |  |
| 414 | 30.1.3 | Software design | manual | 0d | 2020-12-01 | 2020-12-01 |  |  |  |
| 415 | 30.1.4 | Software development | manual | 0d | 2020-12-01 | 2020-12-01 |  |  |  |
| 416 | 30.1.5 | Evaluation | manual | 0d | 2020-12-01 | 2020-12-01 |  |  |  |
| 417 | 30.2 | **QA & Testing** |  | 0d | 2020-12-01 | 2020-12-01 |  |  |  |
| 418 | 30.2.1 | Write testing documents and procedures | manual | 5d |  |  |  |  | QA |
| 419 | 30.2.2 | Testing | manual | 10d |  |  |  |  | QA |
| 420 | 30.2.3 | Fixed & Improvements | manual | 10d |  |  |  |  | Chen |
| 422 | 30.4 | **Documentation** |  | 0d | 2020-12-01 | 2020-12-01 |  |  |  |
| 423 | 30.4.1 | Write operating procedures | manual | 0d | 2020-12-01 | 2020-12-01 |  |  |  |
| 424 | 30.4.2 | Write troubleshooting procedures | manual | 0d | 2020-12-01 | 2020-12-01 |  |  |  |
| 425 | 30.4.3 | Write maintenance procedures | manual | 0d | 2020-12-01 | 2020-12-01 |  |  |  |
| 427 | 30.6 | **Training Materials** |  | 0d | 2020-12-01 | 2020-12-01 |  |  |  |
| 428 | 30.6.1 | Write training docuements | manual | 0d | 2020-12-01 | 2020-12-01 |  |  | TechWriter |
| 431 | 30.9 | **Help Desk (originally in 1.3.3) - Check UVDesk** |  | 0d | 2020-12-01 | 2020-12-01 |  |  |  |
| 432 | 30.9.1 | Requirements | manual | 0d | 2020-12-01 | 2020-12-01 |  |  |  |
| 433 | 30.9.2 | Research available products (Check UVDesk) | manual | 0d | 2020-12-01 | 2020-12-01 |  |  | Chen |
| 434 | 30.9.3 | Functional design | manual | 0d | 2020-12-01 | 2020-12-01 |  |  |  |
| 435 | 30.9.4 | Write procedures | manual | 0d | 2020-12-01 | 2020-12-01 |  |  |  |
| 436 | 30.9.5 | Develop plugins if required (Optional) | manual | 0d | 2020-12-01 | 2020-12-01 |  |  | Chen |
| 437 | 30.9.6 | Write training materials | manual | 0d | 2020-12-01 | 2020-12-01 |  |  |  |
| 438 | 30.9.7 | Evaluation | manual | 0d | 2020-12-01 | 2020-12-01 |  |  |  |
