# ULTRASAT MASTER Gantt

Schedule from MS Project XML, 2021-01-01 to 2025-05-01.

## Calendars

- Standard: Mon-Thu 08:00-12:00, 13:00-17:00; Fri-Sat off; Sun 08:00-12:00, 13:00-17:00.

## Resources

| Resource |
| --- |
| Lior |
| Chen |

## Schedule

| ID | WBS | Task | Type | Duration | Start | Finish | Constraint | Resources |
| --- | --- | --- | --- | --- | --- | --- | --- | --- |
| 1 | 1 | ULTRASAT MASTER GANTT | manual | 0d | 2021-01-01 | 2021-01-01 |  |  |
| 2 | 2 | Last updated: 27/06/2021 | manual | 0d | 2021-01-01 | 2021-01-01 |  |  |
| 4 | 4 | **System Engineering & Infrastructure** |  | 1046d | 2021-05-01 | 2025-05-01 | start no earlier than 2021-05-01 |  |
| 5 | 4.1 | Architectural Design - Current Building |  | 35d | 2021-05-01 | 2021-06-16 |  |  |
| 6 | 4.2 | Architectural Design - New Building | manual | 0d | 2021-01-01 | 2021-01-01 |  |  |
| 7 | 4.3 | Hardware Procurement |  | 961d | 2021-05-01 | 2025-01-02 |  | Lior |
| 8 | 4.4 | Comm (Servers, Storage, Network) Room - Primary & Backup |  | 639d | 2021-05-01 | 2023-10-10 |  |  |
| 9 | 4.5 | SOC Room |  | 635d | 2021-05-01 | 2023-10-04 |  |  |
| 10 | 4.6 | Visitor Center - New Building - TBD |  | 87d | 2025-01-01 | 2025-05-01 |  |  |
| 11 | 4.7 | WIS Network Requirements |  | 590d | 2021-05-01 | 2023-08-02 |  |  |
| 12 | 4.8 | Secured Interfaces to IAI (see also Cyber) |  | 7d | 2022-02-02 | 2022-02-10 |  |  |
| 13 | 4.9 | Secured WEB Interfaces (DESY, NASA, LSST, Public) - see also Cyber |  | 154d | 2023-01-01 | 2023-08-02 |  |  |
| 15 | 6 | **Software Development** |  | 810d | 2021-01-01 | 2024-02-07 | start no earlier than 2021-01-01 |  |
| 16 | 6.1 | Development - Operations - SOC Command & Control of ULTRASAT | manual | 0d | 2021-01-01 | 2021-01-01 |  |  |
| 17 | 6.2 | Development - Observation Planning | manual | 0d | 2021-01-01 | 2021-01-01 |  |  |
| 18 | 6.3 | Development - IAI Interface |  | 295d | 2022-02-01 | 2023-03-20 |  |  |
| 19 | 6.4 | Development - NASA Interface |  | 262d | 2023-01-01 | 2024-01-01 |  |  |
| 20 | 6.5 | Development - DESY Interface |  | 263d | 2022-12-30 | 2024-01-01 |  |  |
| 21 | 6.6 | Development - LSST Interface |  | 267d | 2022-12-30 | 2024-01-07 |  |  |
| 22 | 6.7 | Pipeline - Phase 1 |  | 217d | 2021-08-30 | 2022-06-28 |  |  |
| 23 | 6.8 | Pipeline - Phase 2 |  | 48d | 2022-02-02 | 2022-04-10 |  |  |
| 24 | 6.9 | WIS Databases & Archives |  | 310d | 2021-01-01 | 2022-03-09 |  |  |
| 25 | 6.10 | Databases & Archives |  | 101d | 2023-03-01 | 2023-07-19 |  |  |
| 26 | 6.11 | Products Access (WebApps, GUI, SQL, Python API) |  | 100d | 2023-03-02 | 2023-07-19 |  |  |
| 27 | 6.12 | Alerts Access |  | 289d | 2023-01-01 | 2024-02-07 |  |  |
| 28 | 6.13 | Partial Pipeline |  | 5d | 2023-01-15 | 2023-01-19 |  |  |
| 29 | 6.14 | SOC - Procedures and Rule Engine [Development] |  | 5d | 2022-12-30 | 2023-01-04 |  | Chen |
| 30 | 6.15 | SOC - System Monitoring |  | 5d | 2022-12-30 | 2023-01-04 |  |  |
| 31 | 6.16 | SOC - QA & Testing | manual | 0d | 2021-01-01 | 2021-01-01 |  |  |
| 32 | 6.17 | SOC - Component Testing | manual | 0d | 2021-01-01 | 2021-01-01 |  |  |

| ID | WBS | Task | Duration | Start | Finish | Constraint | Resources |
| --- | --- | --- | --- | --- | --- | --- | --- |
| 34 | 8 | **QA & Integration + Acceptance Tests (1.9)** | 102d | 2024-04-01 | 2024-08-20 | start no earlier than 2024-04-01 |  |
| 35 | 8.1 | SOC Internal - Software Component | 45d | 2024-04-29 | 2024-06-30 |  |  |
| 36 | 8.2 | SOC External - IAI | 5d | 2024-04-01 | 2024-04-07 |  |  |
| 37 | 8.3 | SOC External - DESY | 45d | 2024-04-21 | 2024-06-20 |  |  |
| 38 | 8.4 | SOC External - NASA | 59d | 2024-04-01 | 2024-06-20 |  |  |
| 39 | 8.5 | SOC External - LSST | 40d | 2024-04-21 | 2024-06-13 |  |  |
| 40 | 8.6 | Final Delivery Review | 14d | 2024-08-01 | 2024-08-20 |  | Lior |
| 42 | 10 | **Training and Documentation (1.10)** | 147d | 2024-01-01 | 2024-07-23 | start no earlier than 2024-01-01 |  |
| 43 | 10.1 | SOC Operation Simulator Development | 40d | 2024-05-29 | 2024-07-23 |  |  |
| 44 | 10.2 | Documentation | 90d | 2024-01-01 | 2024-05-05 |  |  |
| 45 | 10.3 | Training Materials | 30d | 2024-05-06 | 2024-06-16 |  |  |
| 46 | 10.4 | Help Desk | 5d | 2024-01-29 | 2024-02-04 |  |  |
| 48 | 12 | Full Production Date | 14d | 2024-08-01 | 2024-08-20 | start no earlier than 2024-08-01 | Lior |
