# ULTRASAT Gantt

Schedule from MS Project XML, 2020-12-01 to 2025-05-01, A marks actual dates.

## Calendars

- Standard: Mon-Thu 08:00-12:00, 13:00-17:00; Fri-Sat off; Sun 08:00-12:00, 13:00-17:00.

## Resources

| Resource |
| --- |
| Eran |
| UAT |
| Puzzle |
| Lior |
| Yossi |
| QA |
| Team |
| TechWriter |
| Chen |
| MatlabQA |

## Schedule

| ID | WBS | Task | Type | Duration | Start | Finish | Predecessors | Complete | Remaining | Constraint | Resources | Text1 |
| --- | --- | --- | --- | --- | --- | --- | --- | --- | --- | --- | --- | --- |
| 1 | 1 | ULTRASAT PROJECT GANTT | manual | 0d | 2020-12-01 | 2020-12-01 |  |  |  |  |  |  |
| 2 | 2 | Last updated: 08/06/2021 | manual | 0d | 2020-12-01 | 2020-12-01 |  |  |  |  |  |  |
| 5 | 5 | **Project Management (1.1)** |  | 1068d | 2020-12-01 A | 2025-01-02 |  | 3% | 1035.96d | start no earlier than 2020-12-01 |  |  |
| 6 | 5.1 | **System Engineering** |  | 153d | 2020-12-01 A | 2021-07-01 |  | 42% | 88.74d |  |  |  |
| 7 | 5.1.1 | General design (Puzzle documents) |  | 65d | 2020-12-01 A | 2021-03-01 |  | 100% |  |  | Puzzle | Complete |
| 8 | 5.1.2 | Project timeline planning |  | 88d | 2021-03-02 | 2021-07-01 | 7 |  |  |  | Lior |  |
| 10 | 5.3 | **Integrated Logistic Support (ILS) = Project Maintenance Plan** |  | 696d | 2021-04-01 | 2023-11-30 |  |  |  |  |  |  |
| 11 | 5.3.1 | Collect information |  | 261d | 2021-04-01 | 2022-03-31 |  |  |  |  | Lior |  |
| 12 | 5.3.2 | Design |  | 262d | 2021-06-01 | 2022-06-01 |  |  |  |  | Lior |  |
| 13 | 5.3.3 | Write documents and procedures |  | 391d | 2022-06-02 | 2023-11-30 | 12 |  |  |  | Lior |  |
| 14 | 5.3.4 | Write documentation for system parts |  | 391d | 2022-06-02 | 2023-11-30 | 12 |  |  |  | Lior |  |
| 16 | 5.5 | **SOC Standard Operating Procedure (SOP) & Training** |  | 566d | 2021-05-01 | 2023-06-29 |  |  |  |  |  |  |
| 17 | 5.5.1 | Collect information |  | 262d | 2021-05-01 | 2022-05-01 |  |  |  |  | Lior |  |
| 18 | 5.5.2 | Design |  | 44d | 2022-05-01 | 2022-06-29 |  |  |  |  | Lior |  |
| 19 | 5.5.3 | Write SOC operating procedures |  | 261d | 2022-06-30 | 2023-06-29 | 18 |  |  |  | Lior |  |
| 20 | 5.5.4 | Write SOC training materials |  | 261d | 2022-06-30 | 2023-06-29 | 18 |  |  |  | Lior |  |
| 22 | 5.7 | **Architectural Design** |  | 176d | 2021-05-01 | 2021-12-30 |  |  |  |  |  |  |
| 23 | 5.7.1 | **Current Building** |  | 35d | 2021-05-01 | 2021-06-16 |  |  |  |  |  |  |
| 24 | 5.7.1.1 | Comm |  | 35d | 2021-05-01 | 2021-06-16 |  |  |  |  | Lior |  |
| 25 | 5.7.1.2 | SOC |  | 35d | 2021-05-01 | 2021-06-16 |  |  |  |  | Lior |  |
| 26 | 5.7.1.3 | Offices |  | 35d | 2021-05-01 | 2021-06-16 |  |  |  |  | Lior |  |
| 27 | 5.7.2 | **New Building** |  | 176d | 2021-05-01 | 2021-12-30 |  |  |  |  |  |  |
| 28 | 5.7.2.1 | Comm |  | 176d | 2021-05-01 | 2021-12-30 |  |  |  |  | Lior |  |
| 29 | 5.7.2.2 | SOC |  | 176d | 2021-05-01 | 2021-12-30 |  |  |  |  | Lior |  |
| 30 | 5.7.2.3 | Offices |  | 176d | 2021-05-01 | 2021-12-30 |  |  |  |  | Lior |  |

| ID | WBS | Task | Duration | Start | Finish | Predecessors | Constraint | Resources |
| --- | --- | --- | --- | --- | --- | --- | --- | --- |
| 32 | 5.9 | **Hardware Procurement** | 961d | 2021-05-01 | 2025-01-02 |  |  | Lior |
| 33 | 5.9.1 | **Comm (Servers, Storage, Network) Room** | 588d | 2021-05-01 | 2023-07-31 |  |  | Lior |
| 34 | 5.9.1.1 | Specifications | 22d | 2023-01-01 | 2023-01-30 |  |  | Lior |
| 35 | 5.9.1.2 | Servers - Primary & Backup | 93d | 2023-01-31 | 2023-06-08 | 34 |  | Lior |
| 36 | 5.9.1.3 | Storage - Primary & Backup | 130d | 2023-01-31 | 2023-07-31 | 34 |  | Lior |
| 37 | 5.9.1.4 | Racks, Switches, Etc. | 130d | 2023-01-31 | 2023-07-31 | 34 |  | Lior |
| 38 | 5.9.1.5 | Comm, Elect, A/C (Check with Hemda) | 67d | 2021-05-01 | 2021-08-01 |  |  | Lior |
| 39 | 5.9.2 | **SOC** | 154d | 2023-01-01 | 2023-08-02 |  |  | Lior |
| 40 | 5.9.2.1 | Specifications | 22d | 2023-01-01 | 2023-01-30 |  |  | Lior |
| 41 | 5.9.2.2 | Workstations | 132d | 2023-01-31 | 2023-08-02 | 40 |  | Lior |
| 42 | 5.9.2.3 | Monitors (Wall + Desktop) | 132d | 2023-01-31 | 2023-08-02 | 40 |  | Lior |
| 43 | 5.9.3 | **Office** | 134d | 2023-01-01 | 2023-07-05 |  |  |  |
| 44 | 5.9.3.1 | Specifications | 24d | 2023-01-01 | 2023-02-01 |  |  | Lior |
| 45 | 5.9.3.2 | Workstations | 110d | 2023-02-02 | 2023-07-05 | 44 |  | Lior |
| 46 | 5.9.3.3 | Monitors | 110d | 2023-02-02 | 2023-07-05 | 44 |  | Lior |
| 47 | 5.9.4 | **New Building and Auditorium** | 264d | 2024-01-01 | 2025-01-02 |  |  |  |
| 48 | 5.9.4.1 | Specifications | 44d | 2024-01-01 | 2024-02-29 |  |  | Lior |
| 49 | 5.9.4.2 | Procurement - Comm, SOC, Office | 220d | 2024-03-03 | 2025-01-02 | 48 |  | Lior |
| 51 | 7 | **Infrastructure (1.2)** | 1131d | 2021-01-01 | 2025-05-01 |  | start no earlier than 2021-01-01 |  |
| 52 | 7.1 | **Comm (Servers, Storage, Network) Room - Primary & Backup** | 639d | 2021-05-01 | 2023-10-10 |  |  |  |
| 53 | 7.1.1 | Passive (Cables, Connectors) | 67d | 2021-05-01 | 2021-08-01 |  |  | Lior |
| 54 | 7.1.2 | Active (Racks, Network switches, network connection) | 65d | 2023-01-01 | 2023-03-30 |  |  | Lior |
| 55 | 7.1.3 | **Installation and Setup** | 88d | 2023-06-11 | 2023-10-10 | 35 |  |  |
| 56 | 7.1.3.1 | Servers installation & configuration | 88d | 2023-06-11 | 2023-10-10 |  |  | Lior |
| 57 | 7.1.3.2 | Storage installation & configuration | 88d | 2023-06-11 | 2023-10-10 |  |  | Lior |
| 58 | 7.1.3.3 | Network setup | 88d | 2023-06-11 | 2023-10-10 |  |  | Lior |
| 59 | 7.1.3.4 | Server, Storage, Network - Evaluation | 66d | 2023-06-11 | 2023-09-10 |  |  | Lior |

| ID | WBS | Task | Duration | Start | Finish | Predecessors | Constraint | Resources |
| --- | --- | --- | --- | --- | --- | --- | --- | --- |
| 60 | 7.2 | **SOC Room** | 635d | 2021-05-01 | 2023-10-04 |  |  |  |
| 61 | 7.2.1 | Passive (Cables, Connectors) | 67d | 2021-05-01 | 2021-08-01 |  |  | Lior |
| 62 | 7.2.2 | Active (Racks, Network switches, network connection) | 45d | 2023-08-03 | 2023-10-04 | 39 |  | Lior |
| 63 | 7.2.3 | Multimedia - Monitors, Matrix | 45d | 2023-08-03 | 2023-10-04 | 39 |  | Lior |
| 64 | 7.3 | **Visitor Center - New Building - TBD** | 87d | 2025-01-01 | 2025-05-01 |  |  |  |
| 65 | 7.3.1 | Passive (Racks, Cables, Connectors) | 87d | 2025-01-01 | 2025-05-01 |  |  | Lior |
| 66 | 7.3.2 | Active (Network switches, network connection) | 87d | 2025-01-01 | 2025-05-01 |  |  | Lior |
| 67 | 7.3.3 | Multimedia | 87d | 2025-01-01 | 2025-05-01 |  |  | Lior |
| 68 | 7.4 | **WIS Network Requirements** | 590d | 2021-05-01 | 2023-08-02 |  |  |  |
| 69 | 7.4.1 | Write detailed specifications for the hardware and networking components | 90d | 2021-05-01 | 2021-09-01 |  |  | Lior |
| 70 | 7.4.2 | Network installation and setup | 500d | 2021-09-02 | 2023-08-02 | 69 |  | Lior |
| 71 | 7.5 | **Secured Interfaces to IAI (see also Cyber)** | 498d | 2021-01-01 | 2022-11-28 |  |  |  |
| 72 | 7.5.1 | **Communication** | 433d | 2021-04-01 | 2022-11-28 |  |  | Lior |
| 73 | 7.5.1.1 | Specifications | 110d | 2021-04-01 | 2021-09-01 |  |  | Lior |
| 74 | 7.5.1.2 | Fiber / ADSL / Redundancy | 21d | 2022-09-02 | 2022-09-29 |  |  | Lior |
| 75 | 7.5.1.3 | IPSec / Cyber / Firewall / VPN | 21d | 2022-10-02 | 2022-10-30 | 74 |  | Lior |
| 76 | 7.5.1.4 | Integration & Testing | 21d | 2022-10-31 | 2022-11-28 | 75 |  | Lior |
| 77 | 7.5.2 | Protocol specifications with IAI - XML etc. | 284d | 2021-01-01 | 2022-02-01 |  |  | Yossi |
| 78 | 7.5.3 | Protocol Review | 7d | 2022-02-02 | 2022-02-10 | 77 |  |  |
| 79 | 7.6 | **Secured WEB Interfaces (DESY, NASA, LSST, Public) - see also Cyber** | 154d | 2023-01-01 | 2023-08-02 |  |  |  |
| 80 | 7.6.1 | Specifications | 110d | 2023-01-01 | 2023-06-01 |  |  | Lior |
| 81 | 7.6.2 | Check Cyber aspects | 110d | 2023-01-01 | 2023-06-01 |  |  | Lior |
| 82 | 7.6.3 | Installation & Configuration | 44d | 2023-06-04 | 2023-08-02 | 80 |  | Lior |
| 84 | 9 | **Observation, Operation, Management, Control (1.3) [Software]** | 527d | 2021-04-01 | 2023-04-09 |  | start no earlier than 2021-04-01 |  |
| 85 | 9.1 | **Operations - SOC Command & Control of ULTRASAT** | 527d | 2021-04-01 | 2023-04-09 |  |  |  |
| 86 | 9.1.1 | Functional design (Including incoming alerts, LSST, etc.) | 305d | 2021-04-01 | 2022-06-01 |  |  | Chen |
| 87 | 9.1.2 | Software design | 305d | 2021-04-01 | 2022-06-01 |  |  | Chen |
| 88 | 9.1.3 | GUI design | 285d | 2021-05-01 | 2022-06-01 |  |  | Chen |
| 89 | 9.1.4 | Design Review | 6d | 2022-06-02 | 2022-06-09 | 88 |  | Chen |
| 90 | 9.1.5 | Software development | 123d | 2022-06-12 | 2022-11-29 | 89 |  | Chen |

| ID | WBS | Task | Duration | Start | Finish | Predecessors | Constraint | Resources |
| --- | --- | --- | --- | --- | --- | --- | --- | --- |
| 91 | 9.1.6 | **QA & Testing** | 147d | 2022-07-15 | 2023-02-05 |  |  |  |
| 92 | 9.1.6.1 | Write testing documents | 13d | 2022-07-15 | 2022-08-01 |  |  | QA |
| 93 | 9.1.6.2 | Testing | 67d | 2022-08-02 | 2022-11-02 | 92 |  | QA |
| 94 | 9.1.6.3 | Fixes & Improvements | 134d | 2022-08-02 | 2023-02-05 | 92 |  | Chen |
| 95 | 9.1.7 | Delivery Review | 45d | 2023-02-06 | 2023-04-09 | 94 |  | Chen |
| 97 | 9.3 | **Observation Planning** | 506d | 2021-05-01 | 2023-04-06 |  |  |  |
| 98 | 9.3.1 | Functional design | 285d | 2021-05-01 | 2022-06-01 |  |  | Eran |
| 99 | 9.3.2 | Software design | 196d | 2021-09-01 | 2022-06-01 |  |  | Chen |
| 100 | 9.3.3 | GUI design | 196d | 2021-09-01 | 2022-06-01 |  |  | Chen |
| 101 | 9.3.4 | Design Review | 6d | 2022-06-02 | 2022-06-09 | 100 |  | Chen |
| 102 | 9.3.5 | Algorithms development | 125d | 2022-06-12 | 2022-12-01 |  |  | Eran |
| 103 | 9.3.6 | Software development | 125d | 2022-06-12 | 2022-12-01 |  |  | Chen |
| 104 | 9.3.7 | GUI development - Desktop / Web | 59d | 2022-09-12 | 2022-12-01 |  |  | Chen |
| 105 | 9.3.8 | **QA & Testing** | 132d | 2022-09-14 | 2023-03-16 |  |  |  |
| 106 | 9.3.8.1 | Write testing documents | 12d | 2022-09-14 | 2022-09-29 |  |  | QA |
| 107 | 9.3.8.2 | Testing | 120d | 2022-10-02 | 2023-03-16 | 106 |  | QA |
| 108 | 9.3.8.3 | Fixes & Improvements | 120d | 2022-10-01 | 2023-03-15 |  |  | Chen |
| 109 | 9.3.9 | Delivery Review | 16d | 2023-03-16 | 2023-04-06 | 108 |  | Chen |
| 112 | 11 | **External Interfaces (1.4) - [Software]** | 504d | 2022-02-01 | 2024-01-07 |  | start no earlier than 2022-02-01 |  |
| 113 | 11.1 | **IAI Interface** | 289d | 2022-02-01 | 2023-03-12 |  |  |  |
| 114 | 11.1.1 | Complete protocol specifications with IAI-GCS | 22d | 2022-02-01 | 2022-03-02 |  |  | Yossi |
| 115 | 11.1.2 | Design Review | 6d | 2022-03-03 | 2022-03-10 | 114 |  |  |
| 116 | 11.1.3 | Develop Incoming images handling - from IAI to Pipeline | 261d | 2022-03-13 | 2023-03-12 | 115 |  | Chen |
| 117 | 11.1.4 | Develop Metadata handling - from IAI to Pipeline and Managers | 261d | 2022-03-13 | 2023-03-12 | 115 |  | Chen |
| 118 | 11.1.5 | Develop Command & Control aspects | 261d | 2022-03-13 | 2023-03-12 | 115 |  | Chen |
| 119 | 11.1.6 | Develop Simulators and testing tools | 261d | 2022-03-13 | 2023-03-12 | 115 |  | Chen |

| ID | WBS | Task | Duration | Start | Finish | Predecessors | Resources |
| --- | --- | --- | --- | --- | --- | --- | --- |
| 120 | 11.1.7 | **QA & Testing** | 54d | 2022-03-01 | 2022-05-15 |  |  |
| 121 | 11.1.7.1 | Write testing documents | 9d | 2022-03-01 | 2022-03-13 |  | QA |
| 122 | 11.1.7.2 | Testing | 45d | 2022-03-14 | 2022-05-15 | 121 | QA |
| 123 | 11.1.7.3 | Fixes & Improvements | 45d | 2022-03-14 | 2022-05-15 | 121 | Chen |
| 124 | 11.2 | Delivery Review | 6d | 2023-03-13 | 2023-03-20 |  |  |
| 126 | 11.4 | **NASA Interface** | 267d | 2022-06-01 | 2023-06-08 |  |  |
| 127 | 11.4.1 | **Communication - Infrastructure** | 111d | 2022-08-01 | 2023-01-02 |  | Lior |
| 128 | 11.4.1.1 | Fiber / ADSL / Redundancy | 89d | 2022-08-01 | 2022-12-01 |  | Lior |
| 129 | 11.4.1.2 | IPSec / Cyber / Firewall | 89d | 2022-08-01 | 2022-12-01 |  | Lior |
| 130 | 11.4.1.3 | Integration & Testing | 22d | 2022-12-04 | 2023-01-02 | 128, 129 | QA |
| 131 | 11.4.2 | Design - requirements, protocols, access | 153d | 2022-06-01 | 2023-01-01 |  | Yossi |
| 132 | 11.4.3 | Design Review | 5d | 2023-01-01 | 2023-01-05 |  |  |
| 133 | 11.4.4 | Development | 110d | 2023-01-08 | 2023-06-08 | 132 | Chen |
| 134 | 11.4.5 | **QA & Testing** | 87d | 2023-02-01 | 2023-06-01 |  |  |
| 135 | 11.4.5.1 | Write testing documents | 21d | 2023-02-01 | 2023-03-01 |  | QA |
| 136 | 11.4.5.2 | Testing | 67d | 2023-03-01 | 2023-06-01 |  | QA |
| 137 | 11.4.5.3 | Fixes & Improvements | 67d | 2023-03-01 | 2023-06-01 |  | Chen |
| 138 | 11.5 | Delivery Review | 1d | 2024-01-01 | 2024-01-01 |  |  |
| 140 | 11.7 | **DESY Interface** | 217d | 2022-06-01 | 2023-03-30 |  |  |
| 141 | 11.7.1 | **Communication - Infrastructure** | 109d | 2022-08-01 | 2022-12-29 |  | Lior |
| 142 | 11.7.1.1 | Fiber / ADSL / Redundancy | 89d | 2022-08-01 | 2022-12-01 |  | Lior |
| 143 | 11.7.1.2 | IPSec / Cyber / Firewall | 89d | 2022-08-01 | 2022-12-01 |  | Lior |
| 144 | 11.7.1.3 | Integration & Testing | 21d | 2022-12-01 | 2022-12-29 |  | QA |
| 145 | 11.7.2 | Design - requirements, protocols, access | 153d | 2022-06-01 | 2023-01-01 |  | Yossi |
| 146 | 11.7.3 | Design Review | 1d | 2022-12-30 | 2022-12-30 |  |  |
| 147 | 11.7.4 | Development | 65d | 2023-01-01 | 2023-03-30 |  | Chen |

| ID | WBS | Task | Type | Duration | Start | Finish | Constraint | Resources | Text1 |
| --- | --- | --- | --- | --- | --- | --- | --- | --- | --- |
| 148 | 11.7.5 | **QA & Testing** |  | 44d | 2023-01-01 | 2023-03-01 |  | QA |  |
| 149 | 11.7.5.1 | Write testing documents |  | 24d | 2023-01-01 | 2023-02-01 |  | QA |  |
| 150 | 11.7.5.2 | Testing |  | 21d | 2023-02-01 | 2023-03-01 |  | QA |  |
| 151 | 11.7.5.3 | Fixes & Improvements |  | 21d | 2023-02-01 | 2023-03-01 |  | Chen |  |
| 152 | 11.8 | Delivery Review |  | 1d | 2024-01-01 | 2024-01-01 |  |  |  |
| 154 | 11.10 | **LSST Interface** |  | 183d | 2022-08-01 | 2023-04-12 |  |  |  |
| 155 | 11.10.1 | **Communication - Infrastructure** |  | 109d | 2022-08-01 | 2022-12-29 |  | Lior |  |
| 156 | 11.10.1.1 | Fiber / ADSL / Redundancy |  | 89d | 2022-08-01 | 2022-12-01 |  | Lior |  |
| 157 | 11.10.1.2 | IPSec / Cyber / Firewall |  | 89d | 2022-08-01 | 2022-12-01 |  | Lior |  |
| 158 | 11.10.1.3 | Integration & Testing |  | 21d | 2022-12-01 | 2022-12-29 |  | QA |  |
| 159 | 11.10.2 | Design - requirements, protocols, access | manual | 10d |  |  |  | Yossi |  |
| 160 | 11.10.3 | Design Review |  | 1d | 2022-12-30 | 2022-12-30 |  |  |  |
| 161 | 11.10.4 | Development |  | 20d | 2023-01-01 | 2023-01-26 |  | Chen |  |
| 162 | 11.10.5 | **QA & Testing** |  | 31d | 2023-03-01 | 2023-04-12 |  | QA |  |
| 163 | 11.10.5.1 | Write testing documents |  | 5d | 2023-03-01 | 2023-03-07 |  | Lior |  |
| 164 | 11.10.5.2 | Testing |  | 10d | 2023-04-01 | 2023-04-12 |  | QA |  |
| 165 | 11.10.5.3 | Fixes & Improvements |  | 10d | 2023-04-01 | 2023-04-12 |  | Chen |  |
| 166 | 11.11 | Delivery Review |  | 5d | 2024-01-01 | 2024-01-07 |  |  |  |
| 169 | 14 | **Image & Data Processing (1.5) [Software]** |  | 389d | 2021-01-01 | 2022-06-28 | start no earlier than 2021-01-01 |  |  |
| 170 | 14.1 | **Pipeline (MATLAB)** |  | 384d | 2021-01-01 | 2022-06-21 |  |  |  |
| 171 | 14.1.1 | Functional design |  | 240d | 2021-01-01 | 2021-12-01 |  | Eran | In Progress |
| 172 | 14.1.2 | Databases design |  | 240d | 2021-01-01 | 2021-12-01 |  | Eran | In Progress |
| 173 | 14.1.3 | AstroPack Packages/Class design |  | 198d | 2021-03-01 | 2021-12-01 |  | Eran | In Progress |
| 174 | 14.1.4 | **Software Development - Core** |  | 198d | 2021-03-01 | 2021-12-01 |  |  |  |
| 175 | 14.1.4.1 | Base classes (Header, Containers, etc) |  | 188d | 2021-03-15 | 2021-12-01 |  | Eran | In Progress |
| 176 | 14.1.4.2 | Base classes - Log, Database |  | 67d | 2021-03-01 | 2021-06-01 |  | Chen |  |
| 177 | 14.1.4.3 | Pipeline Manager |  | 67d | 2021-05-01 | 2021-08-01 |  | Chen |  |
| 178 | 14.1.4.4 | Single step process - From RawImage to Products |  | 45d | 2021-07-01 | 2021-09-01 |  | Eran |  |
| 179 | 14.1.4.5 | GUI |  | 67d | 2021-06-01 | 2021-09-01 |  |  |  |
| 180 | 14.1.5 | Design & Status Review - Phase 1 |  | 6d | 2021-08-30 | 2021-09-06 |  |  |  |

| ID | WBS | Task | Type | Duration | Start | Finish | Predecessors | Resources |
| --- | --- | --- | --- | --- | --- | --- | --- | --- |
| 181 | 14.1.6 | **LAST Usecase** |  | 74d | 2021-09-01 | 2021-12-13 |  |  |
| 182 | 14.1.6.1 | Specifications |  | 14d | 2021-09-01 | 2021-09-20 |  | Eran |
| 183 | 14.1.6.2 | Additional development - Algorithms |  | 30d | 2021-09-21 | 2021-11-01 | 182 | Eran |
| 184 | 14.1.6.3 | Additional development - System |  | 30d | 2021-09-21 | 2021-11-01 | 182 | Chen |
| 185 | 14.1.6.4 | QA & Testing |  | 30d | 2021-11-02 | 2021-12-13 | 184 | MatlabQA |
| 186 | 14.1.6.5 | Fixes & Improvements |  | 30d | 2021-11-02 | 2021-12-13 | 184 | Chen |
| 187 | 14.1.7 | LAST Delivery Review |  | 5d | 2022-01-01 | 2022-01-05 |  |  |
| 188 | 14.1.8 | **Pipeline Development** |  | 0d | 2020-12-01 | 2020-12-01 |  |  |
| 189 | 14.1.8.1 | TODO HERE - DETAILS........... | manual | 0d | 2020-12-01 | 2020-12-01 |  |  |
| 192 | 14.1.11 | **QA & Testing** |  | 100d | 2021-10-01 | 2022-02-16 |  | MatlabQA |
| 193 | 14.1.11.1 | Write testing documents |  | 11d | 2021-10-01 | 2021-10-14 |  | MatlabQA |
| 194 | 14.1.11.2 | Testing |  | 89d | 2021-10-17 | 2022-02-16 | 193 | MatlabQA |
| 195 | 14.1.11.3 | Fixes |  | 89d | 2021-10-17 | 2022-02-16 | 193 | Eran |
| 196 | 14.1.12 | Source code documentation & help |  | 89d | 2022-02-17 | 2022-06-21 | 195 | Eran |
| 197 | 14.2 | Pipeline Delivery Review - Phase 1 |  | 5d | 2022-06-22 | 2022-06-28 | 196 | Eran |
| 199 | 14.4 | **Pipeline - Phase 2 - TBD** |  | 117d | 2022-01-01 | 2022-06-12 |  |  |
| 200 | 14.4.1 | Specifications |  | 24d | 2022-01-01 | 2022-02-01 |  |  |
| 201 | 14.4.2 | Design & Status Review - Phase2 |  | 6d | 2022-02-02 | 2022-02-09 | 200 |  |
| 202 | 14.4.3 | Development |  | 87d | 2022-02-10 | 2022-06-12 | 201 |  |
| 203 | 14.4.4 | **QA & Testing** |  | 42d | 2022-02-02 | 2022-03-31 |  |  |
| 204 | 14.4.4.1 | Write testing documents |  | 12d | 2022-02-02 | 2022-02-17 |  | MatlabQA |
| 205 | 14.4.4.2 | Testing |  | 30d | 2022-02-20 | 2022-03-31 | 204 | MatlabQA |
| 206 | 14.4.4.3 | Fixes |  | 30d | 2022-02-20 | 2022-03-31 | 204 | Eran |
| 207 | 14.5 | Pipeline Delivery Review - Phase 2 |  | 6d | 2022-04-03 | 2022-04-10 | 206 | Eran |

| ID | WBS | Task | Type | Duration | Start | Finish | Predecessors | Constraint | Resources |
| --- | --- | --- | --- | --- | --- | --- | --- | --- | --- |
| 210 | 14.8 | **WIS Databases & Archives** |  | 310d | 2021-01-01 | 2022-03-09 |  |  |  |
| 211 | 14.8.1 | Specifications and design |  | 240d | 2021-01-01 | 2021-12-01 |  |  | Yossi |
| 212 | 14.8.2 | Design Review |  | 6d | 2021-08-30 | 2021-09-06 |  |  |  |
| 213 | 14.8.3 | Development |  | 111d | 2021-05-01 | 2021-09-30 |  |  | Chen |
| 214 | 14.8.4 | **QA & Testing** |  | 45d | 2022-01-01 | 2022-03-02 |  |  | QA |
| 215 | 14.8.4.1 | Write testing documents |  | 5d | 2022-01-01 | 2022-01-05 |  |  | QA |
| 216 | 14.8.4.2 | Testing |  | 20d | 2022-01-06 | 2022-02-02 | 215 |  | QA |
| 217 | 14.8.4.3 | Fixes & Improvements |  | 20d | 2022-02-03 | 2022-03-02 | 216 |  | Chen |
| 218 | 14.8.5 | Delivery Review |  | 5d | 2022-03-03 | 2022-03-09 | 217 |  |  |
| 221 | 17 | **Data Archiving and Accessibility (1.6) [Software]** |  | 702d | 2021-06-01 | 2024-02-07 |  | start no earlier than 2021-06-01 |  |
| 222 | 17.1 | **Databases & Archives** |  | 139d | 2023-01-01 | 2023-07-12 |  |  |  |
| 223 | 17.1.1 | Requirements and design |  | 44d | 2023-01-01 | 2023-03-01 |  |  | Yossi |
| 224 | 17.1.2 | Design Review |  | 5d | 2023-03-01 | 2023-03-07 |  |  |  |
| 225 | 17.1.3 | Development - Phase 1 |  | 66d | 2023-04-01 | 2023-06-29 |  |  | Chen |
| 226 | 17.1.4 | Development - Phase 2 | manual | 0d | 2020-12-01 | 2020-12-01 |  |  | Chen |
| 227 | 17.1.5 | **QA & Testing** |  | 30d | 2023-06-01 | 2023-07-12 |  |  |  |
| 228 | 17.1.5.1 | Write testing documents |  | 10d | 2023-06-01 | 2023-06-14 |  |  | QA |
| 229 | 17.1.5.2 | Testing |  | 10d | 2023-06-15 | 2023-06-28 | 228 |  | QA |
| 230 | 17.1.5.3 | Fixes & Improvements |  | 10d | 2023-06-29 | 2023-07-12 | 229 |  | Chen |
| 231 | 17.2 | Delivery Review |  | 5d | 2023-07-13 | 2023-07-19 | 230 |  |  |
| 233 | 17.4 | **Products Access (WebApps, GUI, SQL, Python API)** |  | 602d | 2021-06-01 | 2023-09-20 |  |  |  |
| 234 | 17.4.1 | Requirements and design |  | 44d | 2023-01-01 | 2023-03-01 |  |  | Yossi |
| 235 | 17.4.2 | Design Review |  | 5d | 2023-03-02 | 2023-03-08 | 234 |  |  |
| 236 | 17.4.3 | Development (WebApp & MobileApp) - Phase 1 |  | 90d | 2023-03-09 | 2023-07-12 | 235 |  | Chen |
| 237 | 17.4.4 | Additional tools design and development (Signal-to-Noise, etc.) |  | 44d | 2021-06-01 | 2021-08-01 |  |  | Chen |
| 238 | 17.4.5 | Development (WebApp & MobileApp) - Phase 2 |  | 50d | 2023-07-13 | 2023-09-20 | 236 |  |  |

| ID | WBS | Task | Duration | Start | Finish | Predecessors | Constraint | Resources |
| --- | --- | --- | --- | --- | --- | --- | --- | --- |
| 239 | 17.4.6 | **QA & Testing** | 30d | 2023-06-01 | 2023-07-12 |  |  |  |
| 240 | 17.4.6.1 | Write testing documents | 10d | 2023-06-01 | 2023-06-14 |  |  | QA |
| 241 | 17.4.6.2 | Testing | 10d | 2023-06-15 | 2023-06-28 | 240 |  | QA |
| 242 | 17.4.6.3 | Fixed & Improvements | 10d | 2023-06-29 | 2023-07-12 | 241 |  | Chen |
| 243 | 17.5 | Delivery Review | 5d | 2023-07-13 | 2023-07-19 | 242 |  |  |
| 245 | 17.7 | **Alerts Access** | 225d | 2023-01-01 | 2023-11-09 |  |  |  |
| 246 | 17.7.1 | Requirements and design | 44d | 2023-01-01 | 2023-03-01 |  |  | Yossi |
| 247 | 17.7.2 | Design Review | 5d | 2023-03-01 | 2023-03-07 |  |  |  |
| 248 | 17.7.3 | Development - Outgoing alerts | 66d | 2023-03-08 | 2023-06-07 | 247 |  | Chen |
| 249 | 17.7.4 | Development (WebApp & MobileApp) | 111d | 2023-06-08 | 2023-11-09 | 248 |  | Chen |
| 250 | 17.7.5 | **QA & Testing** | 30d | 2023-06-08 | 2023-07-19 |  |  |  |
| 251 | 17.7.5.1 | Write testing documents and procedures | 10d | 2023-06-08 | 2023-06-21 | 248 |  | QA |
| 252 | 17.7.5.2 | Testing | 10d | 2023-06-22 | 2023-07-05 | 251 |  | QA |
| 253 | 17.7.5.3 | Fixed & Improvements | 10d | 2023-07-06 | 2023-07-19 | 252 |  | Chen |
| 254 | 17.8 | Delivery Review | 5d | 2024-02-01 | 2024-02-07 |  |  |  |
| 256 | 17.10 | **Partial Pipeline** | 204d | 2023-01-01 | 2023-10-11 |  |  |  |
| 257 | 17.10.1 | Requirements and design | 10d | 2023-01-01 | 2023-01-12 |  |  | Eran |
| 258 | 17.10.2 | Design Review | 5d | 2023-01-15 | 2023-01-19 | 257 |  |  |
| 259 | 17.10.3 | Algorithms Development | 20d | 2023-07-01 | 2023-07-26 |  |  | Eran |
| 260 | 17.10.4 | Development | 20d | 2023-07-01 | 2023-07-26 |  |  | Chen |
| 261 | 17.10.5 | **QA & Testing** | 30d | 2023-09-01 | 2023-10-11 |  |  |  |
| 262 | 17.10.5.1 | Write testing documents | 10d | 2023-09-01 | 2023-09-13 |  |  | QA |
| 263 | 17.10.5.2 | Testing | 10d | 2023-09-14 | 2023-09-27 | 262 |  | Eran |
| 264 | 17.10.5.3 | Fixed & Improvements | 10d | 2023-09-28 | 2023-10-11 | 263 |  | Chen |
| 265 | 18 | Delivery Review | 5d | 2023-10-12 | 2023-10-18 | 264 | start no earlier than 2023-10-12 |  |

| ID | WBS | Task | Type | Duration | Start | Finish | Predecessors | Constraint | Resources |
| --- | --- | --- | --- | --- | --- | --- | --- | --- | --- |
| 268 | 21 | **SOC System Management (1.7) [Software]** |  | 411d | 2021-09-01 | 2023-03-29 |  | start no earlier than 2021-09-01 |  |
| 270 | 21.2 | **SW & HW Infrastructure Architecture** |  | 0d | 2020-12-01 | 2020-12-01 |  |  |  |
| 271 | 21.2.1 | Requirements and design | manual | 0d | 2020-12-01 | 2020-12-01 |  |  | Team |
| 273 | 21.4 | **SOC HMI Concept (GUI)** |  | 351d | 2021-09-01 | 2023-01-04 |  |  |  |
| 274 | 21.4.1 | Design - Functional requirements |  | 5d | 2021-09-01 | 2021-09-07 |  |  | Chen |
| 275 | 21.4.2 | Design - UX |  | 347d | 2021-09-01 | 2022-12-29 |  |  | Chen |
| 276 | 21.4.3 | Design Review |  | 1d | 2022-12-30 | 2022-12-30 |  |  |  |
| 277 | 21.4.4 | Evaluation and improvements |  | 5d | 2022-12-30 | 2023-01-04 |  |  | Team |
| 279 | 21.6 | **Cyber - Requirements and Implementation (VPN in most cases)** |  | 20d | 2023-01-01 | 2023-01-26 |  |  |  |
| 280 | 21.6.1 | IAI |  | 20d | 2023-01-01 | 2023-01-26 |  |  | Lior |
| 281 | 21.6.2 | DESY |  | 20d | 2023-01-01 | 2023-01-26 |  |  | Lior |
| 282 | 21.6.3 | NASA |  | 20d | 2023-01-01 | 2023-01-26 |  |  | Lior |
| 283 | 21.6.4 | LSST |  | 20d | 2023-01-01 | 2023-01-26 |  |  | Lior |
| 284 | 21.6.5 | Public |  | 20d | 2023-01-01 | 2023-01-26 |  |  | Lior |
| 286 | 21.8 | **Procedures and Rule Engine [Development]** |  | 65d | 2022-12-30 | 2023-03-29 |  |  | Chen |
| 287 | 21.8.1 | Requirements and design | manual | 0d | 2020-12-01 | 2020-12-01 |  |  |  |
| 288 | 21.8.2 | Design Review |  | 5d | 2022-12-30 | 2023-01-04 |  |  |  |
| 289 | 21.8.3 | Alerts |  | 10d | 2023-01-05 | 2023-01-18 | 288 |  | Chen |
| 290 | 21.8.4 | Target of Opportunity |  | 10d | 2023-01-19 | 2023-02-01 | 289 |  | Chen |
| 291 | 21.8.5 | Transients |  | 10d | 2023-02-02 | 2023-02-15 | 290 |  | Chen |
| 292 | 21.8.6 | Task Scheduler |  | 20d | 2023-02-16 | 2023-03-15 | 291 |  | Chen |
| 293 | 21.8.7 | Pending tasks |  | 10d | 2023-03-16 | 2023-03-29 | 292 |  | Chen |
| 294 | 21.8.8 | **QA & Testing** |  | 25d | 2023-02-12 | 2023-03-16 |  |  |  |
| 295 | 21.8.8.1 | Write testing documents and procedures |  | 5d | 2023-02-12 | 2023-02-16 |  |  | QA |
| 296 | 21.8.8.2 | Testing |  | 10d | 2023-02-19 | 2023-03-02 | 295 |  | QA |
| 297 | 21.8.8.3 | Fixed & Improvements |  | 10d | 2023-03-05 | 2023-03-16 | 296 |  | Chen |

| ID | WBS | Task | Type | Duration | Start | Finish | Predecessors | Constraint | Resources |
| --- | --- | --- | --- | --- | --- | --- | --- | --- | --- |
| 299 | 21.10 | **System Monitoring** |  | 5d | 2022-12-30 | 2023-01-04 |  |  |  |
| 300 | 21.10.1 | Requirements and design | manual | 0d | 2020-12-01 | 2020-12-01 |  |  |  |
| 301 | 21.10.2 | Design Review |  | 5d | 2022-12-30 | 2023-01-04 |  |  |  |
| 302 | 21.10.3 | Development | manual | 0d | 2020-12-01 | 2020-12-01 |  |  |  |
| 304 | 21.12 | **QA & Testing** |  | 0d | 2020-12-01 | 2020-12-01 |  |  |  |
| 305 | 21.12.1 | Write testing documents and procedures | manual | 5d |  |  |  |  | QA |
| 306 | 21.12.2 | Testing | manual | 10d |  |  |  |  | QA |
| 307 | 21.12.3 | Fixed & Improvements | manual | 10d |  |  |  |  | Chen |
| 309 | 21.14 | **Component Testing** |  | 0d | 2020-12-01 | 2020-12-01 |  |  |  |
| 310 | 21.14.1 | **QA & Testing** |  | 0d | 2020-12-01 | 2020-12-01 |  |  |  |
| 311 | 21.14.1.1 | Write testing documents and procedures | manual | 5d |  |  |  |  | QA |
| 312 | 21.14.1.2 | Testing | manual | 10d |  |  |  |  | QA |
| 313 | 21.14.1.3 | Fixed & Improvements | manual | 10d |  |  |  |  | Chen |
| 316 | 24 | **QA & Integration + Acceptance Tests (1.9)** |  | 72d | 2024-04-01 | 2024-07-09 |  | start no earlier than 2024-04-01 |  |
| 317 | 24.1 | Integration Readiness |  | 5d | 2024-04-01 | 2024-04-07 |  |  | Lior |
| 318 | 24.2 | Integration Review |  | 5d | 2024-04-08 | 2024-04-14 | 317 |  | Lior |
| 321 | 24.5 | **SOC Internal - Software Component** |  | 65d | 2024-04-01 | 2024-06-30 |  |  |  |
| 322 | 24.5.1 | Integration Readiness |  | 5d | 2024-04-01 | 2024-04-07 |  |  | Lior |
| 324 | 24.5.3 | **QA & Testing** |  | 35d | 2024-04-15 | 2024-06-02 |  |  |  |
| 325 | 24.5.3.1 | Write testing documents |  | 10d | 2024-04-15 | 2024-04-28 |  |  | QA |
| 326 | 24.5.3.2 | Integration Review |  | 5d | 2024-04-29 | 2024-05-05 | 325 |  |  |
| 327 | 24.5.3.3 | Testing |  | 10d | 2024-05-06 | 2024-05-19 | 326 |  | QA |
| 328 | 24.5.3.4 | Fixed & Improvements |  | 10d | 2024-05-20 | 2024-06-02 | 327 |  | Chen |
| 329 | 24.5.4 | **Acceptance tests** |  | 20d | 2024-06-03 | 2024-06-30 |  |  |  |
| 330 | 24.5.4.1 | Tests |  | 5d | 2024-06-03 | 2024-06-09 | 328 |  |  |
| 331 | 24.5.4.2 | Fixes |  | 10d | 2024-06-10 | 2024-06-23 | 330 |  |  |
| 332 | 24.5.4.3 | Final tests |  | 5d | 2024-06-24 | 2024-06-30 | 331 |  |  |

| ID | WBS | Task | Duration | Start | Finish | Predecessors | Resources |
| --- | --- | --- | --- | --- | --- | --- | --- |
| 334 | 24.7 | **SOC Internal - SOC Components Integration (HW+SW)** | 65d | 2024-04-01 | 2024-06-30 |  |  |
| 335 | 24.7.1 | Integration Readiness | 5d | 2024-04-01 | 2024-04-07 |  | Lior |
| 337 | 24.7.3 | **QA & Testing** | 35d | 2024-04-15 | 2024-06-02 |  |  |
| 338 | 24.7.3.1 | Write testing documents | 10d | 2024-04-15 | 2024-04-28 |  | QA |
| 339 | 24.7.3.2 | Integration Review | 5d | 2024-04-29 | 2024-05-05 | 338 |  |
| 340 | 24.7.3.3 | Testing | 10d | 2024-05-06 | 2024-05-19 | 339 | QA |
| 341 | 24.7.3.4 | Fixed & Improvements | 10d | 2024-05-20 | 2024-06-02 | 340 | Chen |
| 342 | 24.7.4 | **Acceptance tests** | 20d | 2024-06-03 | 2024-06-30 |  |  |
| 343 | 24.7.4.1 | Tests | 5d | 2024-06-03 | 2024-06-09 | 341 | UAT |
| 344 | 24.7.4.2 | Fixes | 10d | 2024-06-10 | 2024-06-23 | 343 | Chen |
| 345 | 24.7.4.3 | Final tests | 5d | 2024-06-24 | 2024-06-30 | 344 | UAT |
| 347 | 24.9 | **SOC External - IAI** | 72d | 2024-04-01 | 2024-07-09 |  |  |
| 348 | 24.9.1 | Integration Readiness | 5d | 2024-04-01 | 2024-04-07 |  |  |
| 350 | 24.9.3 | **QA & Testing** | 35d | 2024-04-07 | 2024-05-23 |  |  |
| 351 | 24.9.3.1 | Write integration documents | 10d | 2024-04-07 | 2024-04-18 |  | QA |
| 352 | 24.9.3.2 | Integration Review | 5d | 2024-04-21 | 2024-04-25 | 351 |  |
| 353 | 24.9.3.3 | Testing | 10d | 2024-04-28 | 2024-05-09 | 352 | QA |
| 354 | 24.9.3.4 | Fixes and improvements | 10d | 2024-05-12 | 2024-05-23 | 353 | Chen |
| 355 | 24.9.4 | **Acceptance tests** | 33d | 2024-05-26 | 2024-07-09 |  |  |
| 356 | 24.9.4.1 | Tests | 5d | 2024-05-26 | 2024-05-30 | 354 | UAT |
| 357 | 24.9.4.2 | Fixes | 23d | 2024-06-02 | 2024-07-02 | 356 | Chen |
| 358 | 24.9.4.3 | Final tests | 5d | 2024-07-03 | 2024-07-09 | 357 | UAT |
| 360 | 24.11 | **SOC External - DESY** | 59d | 2024-04-01 | 2024-06-20 |  |  |
| 361 | 24.11.1 | Integration Readiness | 5d | 2024-04-01 | 2024-04-07 |  |  |

| ID | WBS | Task | Duration | Start | Finish | Predecessors | Resources |
| --- | --- | --- | --- | --- | --- | --- | --- |
| 363 | 24.11.3 | **QA & Testing** | 35d | 2024-04-07 | 2024-05-23 |  |  |
| 364 | 24.11.3.1 | Write integration documents | 10d | 2024-04-07 | 2024-04-18 |  | QA |
| 365 | 24.11.3.2 | Integration Review | 5d | 2024-04-21 | 2024-04-25 | 364 |  |
| 366 | 24.11.3.3 | Testing | 10d | 2024-04-28 | 2024-05-09 | 365 | QA |
| 367 | 24.11.3.4 | Fixes and improvements | 10d | 2024-05-12 | 2024-05-23 | 366 | Chen |
| 368 | 24.11.4 | **Acceptance tests** | 20d | 2024-05-26 | 2024-06-20 |  |  |
| 369 | 24.11.4.1 | Tests | 5d | 2024-05-26 | 2024-05-30 | 367 | UAT |
| 370 | 24.11.4.2 | Fixes | 10d | 2024-06-02 | 2024-06-13 | 369 | Chen |
| 371 | 24.11.4.3 | Final tests | 5d | 2024-06-16 | 2024-06-20 | 370 | UAT |
| 374 | 24.14 | **SOC External - NASA** | 59d | 2024-04-01 | 2024-06-20 |  |  |
| 375 | 24.14.1 | Integration Readiness | 5d | 2024-04-01 | 2024-04-07 |  | Lior |
| 377 | 24.14.3 | **QA & Testing** | 35d | 2024-04-07 | 2024-05-23 |  |  |
| 378 | 24.14.3.1 | Write integration documents | 10d | 2024-04-07 | 2024-04-18 |  | QA |
| 379 | 24.14.3.2 | Integration Review | 5d | 2024-04-21 | 2024-04-25 | 378 |  |
| 380 | 24.14.3.3 | Testing | 10d | 2024-04-28 | 2024-05-09 | 379 | QA |
| 381 | 24.14.3.4 | Fixes and improvements | 10d | 2024-05-12 | 2024-05-23 | 380 | Chen |
| 382 | 24.14.4 | **Acceptance tests** | 20d | 2024-05-26 | 2024-06-20 |  | UAT |
| 383 | 24.14.4.1 | Tests | 5d | 2024-05-26 | 2024-05-30 | 381 | QA |
| 384 | 24.14.4.2 | Fixes | 10d | 2024-06-02 | 2024-06-13 | 383 | Chen |
| 385 | 24.14.4.3 | Final tests | 5d | 2024-06-16 | 2024-06-20 | 384 | UAT |
| 387 | 24.16 | **SOC External - LSST** | 59d | 2024-04-01 | 2024-06-20 |  |  |
| 388 | 24.16.1 | Integration Readiness | 5d | 2024-04-01 | 2024-04-07 |  | Lior |
| 390 | 24.16.3 | **QA & Testing** | 35d | 2024-04-07 | 2024-05-23 |  |  |
| 391 | 24.16.3.1 | Write integration documents | 10d | 2024-04-07 | 2024-04-18 |  | QA |
| 392 | 24.16.3.2 | Integration Review | 5d | 2024-04-21 | 2024-04-25 | 391 |  |
| 393 | 24.16.3.3 | Testing | 10d | 2024-04-28 | 2024-05-09 | 392 | QA |
| 394 | 24.16.3.4 | Fixes and improvements | 10d | 2024-05-12 | 2024-05-23 | 393 | Chen |

| ID | WBS | Task | Type | Duration | Start | Finish | Predecessors | Constraint | Resources |
| --- | --- | --- | --- | --- | --- | --- | --- | --- | --- |
| 395 | 24.16.4 | **Acceptance tests** |  | 20d | 2024-05-26 | 2024-06-20 |  |  | UAT |
| 396 | 24.16.4.1 | Tests |  | 5d | 2024-05-26 | 2024-05-30 | 394 |  | QA |
| 397 | 24.16.4.2 | Fixes |  | 10d | 2024-06-02 | 2024-06-13 | 396 |  | Chen |
| 398 | 24.16.4.3 | Final tests |  | 5d | 2024-06-16 | 2024-06-20 | 397 |  | UAT |
| 400 | 26 | Final Delivery Review |  | 14d | 2024-08-01 | 2024-08-20 |  | start no earlier than 2024-08-01 | Lior |
| 404 | 30 | **Training and Documentation (1.10)** |  | 178d | 2024-01-01 | 2024-09-04 |  | start no earlier than 2024-01-01 |  |
| 405 | 30.1 | **SOC Operation Simulator Development** |  | 88d | 2024-04-01 | 2024-07-31 |  |  |  |
| 406 | 30.1.1 | Requirements and design |  | 14d | 2024-04-01 | 2024-04-18 |  |  |  |
| 407 | 30.1.2 | Write scenarios |  | 14d | 2024-04-21 | 2024-05-08 | 406 |  |  |
| 408 | 30.1.3 | Software design |  | 14d | 2024-05-09 | 2024-05-28 | 407 |  |  |
| 409 | 30.1.4 | Design Review |  | 6d | 2024-05-29 | 2024-06-05 | 408 |  |  |
| 410 | 30.1.5 | Software development |  | 40d | 2024-06-06 | 2024-07-31 | 409 |  |  |
| 411 | 30.1.6 | Evaluation | manual | 0d | 2020-12-01 | 2020-12-01 |  |  |  |
| 412 | 30.2 | **QA & Testing** |  | 25d | 2024-08-01 | 2024-09-04 |  |  |  |
| 413 | 30.2.1 | Write testing documents |  | 5d | 2024-08-01 | 2024-08-07 | 410 |  | QA |
| 414 | 30.2.2 | Testing |  | 10d | 2024-08-08 | 2024-08-21 | 413 |  | QA |
| 415 | 30.2.3 | Fixed & Improvements |  | 10d | 2024-08-22 | 2024-09-04 | 414 |  | Chen |
| 417 | 30.4 | **Documentation** |  | 90d | 2024-01-01 | 2024-05-05 |  |  |  |
| 418 | 30.4.1 | Write operating procedures |  | 30d | 2024-01-01 | 2024-02-11 |  |  |  |
| 419 | 30.4.2 | Write troubleshooting procedures |  | 30d | 2024-02-12 | 2024-03-24 | 418 |  |  |
| 420 | 30.4.3 | Write maintenance procedures |  | 30d | 2024-03-25 | 2024-05-05 | 419 |  |  |
| 422 | 30.6 | **Training Materials** |  | 30d | 2024-05-06 | 2024-06-16 |  |  |  |
| 423 | 30.6.1 | Write training docuements |  | 30d | 2024-05-06 | 2024-06-16 | 420 |  | TechWriter |
| 426 | 30.9 | **Help Desk (originally in 1.3.3) - Check UVDesk** |  | 80d | 2024-01-01 | 2024-04-21 |  |  |  |
| 427 | 30.9.1 | Requirements |  | 10d | 2024-01-01 | 2024-01-14 |  |  |  |
| 428 | 30.9.2 | Research available products (Check UVDesk) |  | 5d | 2024-01-15 | 2024-01-21 | 427 |  | Chen |
| 429 | 30.9.3 | Functional design |  | 5d | 2024-01-22 | 2024-01-28 | 428 |  |  |
| 430 | 30.9.4 | Design Review |  | 5d | 2024-01-29 | 2024-02-04 | 429 |  |  |
| 431 | 30.9.5 | Write procedures |  | 15d | 2024-02-05 | 2024-02-25 | 430 |  |  |
| 432 | 30.9.6 | Develop plugins if required (Optional) |  | 10d | 2024-02-26 | 2024-03-10 | 431 |  | Chen |
| 433 | 30.9.7 | Write training materials |  | 20d | 2024-03-11 | 2024-04-07 | 432 |  |  |
| 434 | 30.9.8 | Evaluation |  | 10d | 2024-04-08 | 2024-04-21 | 433 |  |  |
| 435 | 30.9.9 | Final Review | manual | 0d | 2020-12-01 | 2020-12-01 |  |  |  |
| 439 | 34 | Final Delivery Review |  | 14d | 2024-08-01 | 2024-08-20 |  | start no earlier than 2024-08-01 | Lior |
